# Extension of the Existing Rail Monitoring System in HEET

Schedule from Primavera P6, 2027-01-03 to 2028-12-07, data date 2027-01-03, costs in SAR.
Must finish by 2028-12-07

## Calendars

- SAR Office & Review (Sun-Thu, 8h): Mon-Thu 08:00-16:00; Fri-Sat off; Sun 08:00-16:00. Exceptions (off unless hours are given): 2027-02-22, 2027-03-08 to 2027-03-11, 2027-05-16 to 2027-05-19, 2027-09-23.
- Field Works (Sun-Thu, 8h): Mon-Thu 08:00-16:00; Fri-Sat off; Sun 08:00-16:00. Exceptions (off unless hours are given): 2027-02-22, 2027-03-08 to 2027-03-11, 2027-05-16 to 2027-05-19, 2027-09-23.
- Procurement & Shipping (7-day, 8h): Mon-Sun 08:00-16:00.

## Resources

| Resource | Group | Rate |
| --- | --- | --- |
| Cost Distribution | material | 1 |
| Protection Officer | labor |  |
| Civil Crew | labor |  |
| Systems Engineers | labor |  |
| Survey Crew | labor |  |
| Design Engineers | labor |  |
| Trench Crew | labor |  |
| Cable Crew | labor |  |
| Splicing & OTDR Team | labor |  |
| Electrical Crew | labor |  |
| Commissioning Team | labor |  |
| IT/OT Engineers | labor |  |
| Document Control / Tech Writers | labor |  |
| QA/QC & HSE Engineer | labor |  |

## Schedule

| ID | WBS | Activity | Type | Duration | Start | Finish | Predecessors | Total float | Free float | Constraint | Calendar | Resources | Cost | Actual cost | Design Stage | BoQ Section | EPC Phase | SoW Stage | Activity Category | Responsible | Section | System | BoQ Item | Basis | Risk Rank | Long Lead | LL No. | BoQ Mapping | Cost Engineering SAR | Cost Material SAR | Cost Labour SAR | Cost Indirect SAR |
| --- | --- | --- | --- | --- | --- | --- | --- | --- | --- | --- | --- | --- | --- | --- | --- | --- | --- | --- | --- | --- | --- | --- | --- | --- | --- | --- | --- | --- | --- | --- | --- | --- |
|  | 1.1 | **PROJECT MANAGEMENT & MILESTONES** |  |  | 2027-01-03 | 2027-12-07 |  |  |  |  |  |  |  |  |  |  |  |  |  |  |  |  |  |  |  |  |  |  |  |  |  |  |
|  | 1.1.1 | **Project Milestones** |  |  | 2027-01-03 | 2027-12-07 |  |  |  |  |  |  |  |  |  |  |  |  |  |  |  |  |  |  |  |  |  |  |  |  |  |  |
| MS-001 |  | NTP - Notice to Proceed (assumed date; re-base on actual NTP) | milestone | 0d | 2027-01-03 | 2027-01-03 |  | 0d |  | start on or after 2027-01-03 |  |  |  |  | - | - | PM - Project Managem | 1 - Mobilization & D | Milestone | Contractor | All | General | - | Planned (contractor) | - | N | - |  |  |  |  |  |
| MS-010 |  | Stage 1 complete - mobilization done & IFC package submitted | milestone | 0d | 2027-02-02 | 2027-02-02 | MOB-1040, DSN-1320, SUB-1410, SUB-1420, SUB-1430, SUB-1440, SUB-1450 | 168d |  |  |  |  |  |  | - | - | PM - Project Managem | 1 - Mobilization & D | Milestone | Contractor | All | General | - | Planned (contractor) | - | N | - |  |  |  |  |  |
| MS-070 |  | Stage 2 complete - procurement, construction & installation complete | milestone | 0d | 2027-10-10 | 2027-10-10 | CIV-540, TDR-3520, WX-3620, COM-3720, CLD-3820, INT-4010, PRM-2160, PRM-2180, PWR-3430, MS-010, TST-4110, CIV-140, CIV-240, CIV-340, CIV-440 | 0d |  |  |  |  |  |  | - | - | PM - Project Managem | 2 - Procurement & Co | Milestone | Contractor | All | General | - | Planned (contractor) | - | N | - |  |  |  |  |  |
| MS-100 |  | Stage 3 complete - commissioning & performance validation complete | milestone | 0d | 2027-11-07 | 2027-11-07 | CMS-4320 | 0d |  |  |  |  |  |  | - | - | PM - Project Managem | 3 - Testing & Commis | Milestone | Contractor | All | General | - | Planned (contractor) | - | N | - |  |  |  |  |  |
| MS-120 |  | Taking-Over - planned completion (contract limit 02-Jan-2028 = NTP + 12 months) | milestone | 0d | 2027-12-07 | 2027-12-07 | HND-5090 | 0d |  |  |  |  |  |  | - | - | PM - Project Managem | 4 - Documentation & | Milestone | Contractor | All | General | - | Planned (contractor) | - | N | - |  |  |  |  |  |
|  | 1.1.2 | **PRELIMINARIES & GENERAL REQUIREMENTS** |  |  | 2027-01-03 | 2027-12-07 |  |  |  |  |  |  |  |  |  |  |  |  |  |  |  |  |  |  |  |  |  |  |  |  |  |  |
| MGT-1060 |  | Project management, QA/QC & HSE supervision and records (LOE) | level of effort | 233d | 2027-01-03 | 2027-12-07 | MOB-1010 SS, HND-5090 FF |  |  |  |  | Cost Distribution [7670]; QA/QC & HSE Engineer [1864 h] | 7,670 | 7,670 | - | F - Documentation, T | PM - Project Managem | 1 - Mobilization & D | Management | Contractor | All | General | 26 | Planned (contractor) | - | N | - | Item 26: 100% = 7,670.00 | 7670.0 | 0.0 | 0.0 | 0.0 |
| MGT-1070 |  | Weekly & monthly progress reporting (LOE) | level of effort | 233d | 2027-01-03 | 2027-12-07 | MOB-1010 SS, HND-5090 FF |  |  |  |  |  |  |  | - | - | PM - Project Managem | 1 - Mobilization & D | Management | Contractor | All | General | - | Planned (contractor) | - | N | - |  |  |  |  |  |
| MOB-1010 |  | Kick-off meeting & project management set-up |  | 2d | 2027-01-03 | 2027-01-04 | MS-001 | 0d |  |  |  |  |  |  | - | - | PM - Project Managem | 1 - Mobilization & D | Management | Contractor | All | General | - | Planned (contractor) | - | N | - |  |  |  |  |  |
| MGT-1090 |  | Obtain SAR risk scores & confirm Section priority (SAR input) |  | 3d | 2027-01-05 | 2027-01-07 | MOB-1010 | 25d | 9d |  |  |  |  |  | - | - | PM - Project Managem | 1 - Mobilization & D | Management | SAR | All | General | - | Planned (contractor) | - | N | - |  |  |  |  |  |
| MOB-1020 |  | Insurance (CAR / TPL) & performance bond issuance |  | 4d | 2027-01-05 | 2027-01-10 | MOB-1010 | 17d | 0d |  |  | Cost Distribution [200600] | 200,600 | 200,600 | - | A - Preliminaries & | PM - Project Managem | 1 - Mobilization & D | Management | Contractor | All | General | 04 | Planned (contractor) | - | N | - | Item 04: 85% = 200,600.00 | 0.0 | 0.0 | 0.0 | 200600.0 |
| MOB-1030 |  | PTS training & PO induction - batch 1 (initial team) |  | 3d | 2027-01-05 | 2027-01-07 | MOB-1010 | 18d | 1d |  |  | Cost Distribution [5664]; Protection Officer [24 h] | 5,664 | 5,664 | - | A - Preliminaries & | PM - Project Managem | 1 - Mobilization & D | Management | Contractor | All | General | 03 | Planned (contractor) | - | N | - | Item 03: 10% = 5,664.00 | 0.0 | 0.0 | 5664.0 | 0.0 |
| MOB-1050 |  | Site security, fencing & traffic management (LOE) | level of effort | 204d | 2027-01-19 | 2027-11-14 | MOB-1040 SS, DEM-5100 FF |  |  |  | Field Works (Sun-Thu, 8h) | Cost Distribution [403560] | 403,560 | 403,560 | - | A - Preliminaries & | PM - Project Managem | 1 - Mobilization & D | Management | Contractor | All | General | 02 | Planned (contractor) | - | N | - | Item 02: 100% = 403,560.00 | 0.0 | 60534.0 | 343026.0 | 0.0 |
| MOB-1080 |  | Protection Officer on site during all field works (LOE) | level of effort | 204d | 2027-01-19 | 2027-11-14 | SRV-1210 SS, DEM-5100 FF |  |  |  | Field Works (Sun-Thu, 8h) | Cost Distribution [45312]; Protection Officer [1632 h] | 45,312 | 45,312 | - | A - Preliminaries & | PM - Project Managem | 1 - Mobilization & D | Management | Contractor | All | General | 03 | Planned (contractor) | - | N | - | Item 03: 80% = 45,312.00 | 0.0 | 0.0 | 45312.0 | 0.0 |
| MOB-3005 |  | PTS training & PO induction - batch 2 (field crews) |  | 3d | 2027-01-31 | 2027-02-02 | PRM-2105 | 41d | 25d |  |  | Cost Distribution [5664]; Protection Officer [24 h] | 5,664 | 5,664 | - | A - Preliminaries & | PM - Project Managem | 1 - Mobilization & D | Management | Contractor | All | General | 03 | Planned (contractor) | - | N | - | Item 03: 10% = 5,664.00 | 0.0 | 0.0 | 5664.0 | 0.0 |
|  | 1.1.3 | **Site Mobilization, Establishment & Demobilization** |  |  | 2027-01-19 | 2027-11-14 |  |  |  |  |  |  |  |  |  |  |  |  |  |  |  |  |  |  |  |  |  |  |  |  |  |  |
| MOB-1040 |  | Site establishment - offices & temporary facilities |  | 8d | 2027-01-19 | 2027-01-28 | PRM-1120 | 44d | 3d |  | Field Works (Sun-Thu, 8h) | Cost Distribution [561680]; Civil Crew [64 h] | 561,680 | 561,680 | - | A - Preliminaries & | PM - Project Managem | 1 - Mobilization & D | Mobilization | Contractor | All | General | 01 | Planned (contractor) | - | N | - | Item 01: 68% = 561,680.00 | 0.0 | 196588.0 | 365092.0 | 0.0 |
| MOB-3010 |  | Mobilize plant, equipment & labour; compound & logistics set-up |  | 5d | 2027-03-17 | 2027-03-23 | PRM-2120, APR-1520, APR-1510, MOB-1040, MOB-3005 | 16d | 0d |  | Field Works (Sun-Thu, 8h) | Cost Distribution [264320]; Civil Crew [40 h] | 264,320 | 264,320 | - | A - Preliminaries & | PM - Project Managem | 2 - Procurement & Co | Mobilization | Contractor | All | General | 01 | Planned (contractor) | - | N | - | Item 01: 32% = 264,320.00 | 0.0 | 92512.0 | 171808.0 | 0.0 |
| DEM-5100 |  | Demobilization & site clearance |  | 5d | 2027-11-08 | 2027-11-14 | DOC-5040, CMS-4320 | 16d |  |  | Field Works (Sun-Thu, 8h) | Cost Distribution [35400]; Civil Crew [40 h] | 35,400 | 35,400 | - | A - Preliminaries & | PM - Project Managem | 3 - Testing & Commis | Mobilization | Contractor | All | General | 04 | Planned (contractor) | - | N | - | Item 04: 15% = 35,400.00 | 0.0 | 0.0 | 0.0 | 35400.0 |
|  | 1.2 | **PERMITS & AUTHORITY APPROVALS (PA)** |  |  | 2027-01-11 | 2027-09-06 |  |  |  |  |  |  |  |  |  |  |  |  |  |  |  |  |  |  |  |  |  |  |  |  |  |  |
|  | 1.2.1 | **SAR Work Permits (Work Permit Portal), Extensions & TTF02** |  |  | 2027-01-11 | 2027-09-06 |  |  |  |  |  |  |  |  |  |  |  |  |  |  |  |  |  |  |  |  |  |  |  |  |  |  |
| PRM-1110 |  | Prepare & submit WP-01 request in Work Permit Portal (survey & assessment) |  | 1d | 2027-01-11 | 2027-01-11 | MOB-1020, MOB-1030 | 17d | 0d |  |  |  |  |  | - | - | PA - Permits & Autho | 1 - Mobilization & D | Permit / Authority | Contractor | All | General | - | Requirement confirme | - | N | - |  |  |  |  |  |
| PRM-1120 |  | SAR review & issue WP-01 (Work Permit Portal) |  | 5d | 2027-01-12 | 2027-01-18 | PRM-1110 | 17d | 0d |  |  |  |  |  | - | - | PA - Permits & Autho | 1 - Mobilization & D | Permit / Authority | SAR | All | General | - | Duration assumed - t | - | N | - |  |  |  |  |  |
| PRM-2105 |  | Prepare TTF02 / Delivery Plan, PICOP certificates & PTS card register |  | 3d | 2027-01-26 | 2027-01-28 | APR-1520, MOB-1030 | 37d | 0d |  |  |  |  |  | - | - | PA - Permits & Autho | 1 - Mobilization & D | Permit / Authority | Contractor | All | General | - | Requirement confirme | - | N | - |  |  |  |  |  |
| PRM-2110 |  | Prepare & submit WP-02 (route construction works, Sections 1-5) in Work Permit Portal |  | 2d | 2027-03-02 | 2027-03-03 | PRM-2105, APR-1580 | 16d | 0d |  |  |  |  |  | - | - | PA - Permits & Autho | 2 - Procurement & Co | Permit / Authority | Contractor | All | General | - | Requirement confirme | - | N | - |  |  |  |  |  |
| PRM-2210 |  | Prepare & submit WP-03 (steel conduits at culverts & track crossings) incl. protection / possession request |  | 2d | 2027-03-02 | 2027-03-03 | PRM-2105, APR-1580 | 29d | 0d |  |  |  |  |  | - | - | PA - Permits & Autho | 2 - Procurement & Co | Permit / Authority | Contractor | All | General | - | Requirement confirme | - | N | - |  |  |  |  |  |
| PRM-2310 |  | Prepare & submit WP-04 (power, shelter & equipment works at monitoring station) |  | 2d | 2027-03-02 | 2027-03-03 | PRM-2105, APR-1580 | 109d | 0d |  |  |  |  |  | - | - | PA - Permits & Autho | 2 - Procurement & Co | Permit / Authority | Contractor | All | General | - | Requirement confirme | - | N | - |  |  |  |  |  |
| PRM-2120 |  | SAR review & issue WP-02 |  | 5d | 2027-03-04 | 2027-03-16 | PRM-2110 | 16d | 0d |  |  |  |  |  | - | - | PA - Permits & Autho | 2 - Procurement & Co | Permit / Authority | SAR | All | General | - | Duration assumed - t | - | N | - |  |  |  |  |  |
| PRM-2220 |  | SAR review & issue WP-03 (track crossings / possession) |  | 7d | 2027-03-04 | 2027-03-18 | PRM-2210 | 29d | 13d |  |  |  |  |  | - | - | PA - Permits & Autho | 2 - Procurement & Co | Permit / Authority | SAR | All | General | - | Duration assumed - t | - | N | - |  |  |  |  |  |
| PRM-2320 |  | SAR review & issue WP-04 |  | 5d | 2027-03-04 | 2027-03-16 | PRM-2310 | 109d | 5d |  |  |  |  |  | - | - | PA - Permits & Autho | 2 - Procurement & Co | Permit / Authority | SAR | All | General | - | Duration assumed - t | - | N | - |  |  |  |  |  |
| PRM-3110 |  | Prepare & submit WP-05 (testing, commissioning & live-system tie-in) in Work Permit Portal |  | 2d | 2027-03-25 | 2027-03-28 | APR-1670, PRM-2620 | 130d | 0d |  |  |  |  |  | - | - | PA - Permits & Autho | 2 - Procurement & Co | Permit / Authority | Contractor | All | General | - | Requirement confirme | - | N | - |  |  |  |  |  |
| PRM-3120 |  | SAR review & issue WP-05 |  | 5d | 2027-03-29 | 2027-04-04 | PRM-3110 | 130d |  |  |  |  |  |  | - | - | PA - Permits & Autho | 2 - Procurement & Co | Permit / Authority | SAR | All | General | - | Duration assumed - t | - | N | - |  |  |  |  |  |
| PRM-2150 |  | Permit extension 1 - progress report, updated insurance policy & TTF02 (Portal) |  | 2d | 2027-06-08 | 2027-06-09 | PRM-2120 FS+55d | 23d | 0d |  |  |  |  |  | - | - | PA - Permits & Autho | 2 - Procurement & Co | Permit / Authority | Contractor | All | General | - | Duration assumed - t | - | N | - |  |  |  |  |  |
| PRM-2160 |  | SAR review & approve permit extension 1 |  | 3d | 2027-06-10 | 2027-06-14 | PRM-2150 | 23d | 0d |  |  |  |  |  | - | - | PA - Permits & Autho | 2 - Procurement & Co | Permit / Authority | SAR | All | General | - | Duration assumed - t | - | N | - |  |  |  |  |  |
| PRM-2170 |  | Permit extension 2 - progress report, updated insurance policy & TTF02 (Portal) |  | 2d | 2027-08-31 | 2027-09-01 | PRM-2160 FS+55d | 23d | 0d |  |  |  |  |  | - | - | PA - Permits & Autho | 2 - Procurement & Co | Permit / Authority | Contractor | All | General | - | Duration assumed - t | - | N | - |  |  |  |  |  |
| PRM-2180 |  | SAR review & approve permit extension 2 |  | 3d | 2027-09-02 | 2027-09-06 | PRM-2170 | 23d |  |  |  |  |  |  | - | - | PA - Permits & Autho | 2 - Procurement & Co | Permit / Authority | SAR | All | General | - | Duration assumed - t | - | N | - |  |  |  |  |  |

| ID | WBS | Activity | Duration | Start | Finish | Predecessors | Total float | Free float | Calendar | Resources | Cost | Actual cost | Design Stage | BoQ Section | EPC Phase | SoW Stage | Activity Category | Responsible | Section | System | BoQ Item | Basis | Risk Rank | Long Lead | LL No. | BoQ Mapping | Cost Engineering SAR | Cost Material SAR | Cost Labour SAR | Cost Indirect SAR |
| --- | --- | --- | --- | --- | --- | --- | --- | --- | --- | --- | --- | --- | --- | --- | --- | --- | --- | --- | --- | --- | --- | --- | --- | --- | --- | --- | --- | --- | --- | --- |
|  | 1.2.2 | **Utility, Telecom & Third-Party Approvals (TBC)** |  | 2027-01-24 | 2027-03-07 |  |  |  |  |  |  |  |  |  |  |  |  |  |  |  |  |  |  |  |  |  |  |  |  |  |
| PRM-2510 |  | Request SIM / data-service activation from STC (primary & backup SIM) | 2d | 2027-01-24 | 2027-01-25 | APR-1540 | 158d | 0d |  |  |  |  | - | - | PA - Permits & Autho | 1 - Mobilization & D | Permit / Authority | Contractor | All | Comms | - | Applicability & dura | - | N | - |  |  |  |  |  |
| PRM-2520 |  | STC SIM provisioning & activation | 5d | 2027-01-26 | 2027-02-01 | PRM-2510 | 158d | 54d |  |  |  |  | - | - | PA - Permits & Autho | 1 - Mobilization & D | Permit / Authority | STC | All | Comms | - | Applicability & dura | - | N | - |  |  |  |  |  |
| PRM-2410 |  | Submit load / connection request to SEC for power upgrade (applicability TBC) | 3d | 2027-02-02 | 2027-02-04 | DSN-1310 | 125d | 0d |  |  |  |  | - | - | PA - Permits & Autho | 1 - Mobilization & D | Permit / Authority | Contractor | All | Power | - | Applicability & dura | - | N | - |  |  |  |  |  |
| PRM-2420 |  | SEC review & connection approval (duration TBC) | 15d | 2027-02-07 | 2027-02-28 | PRM-2410 | 125d | 25d |  |  |  |  | - | - | PA - Permits & Autho | 2 - Procurement & Co | Permit / Authority | SEC | All | Power | - | Applicability & dura | - | N | - |  |  |  |  |  |
| PRM-2610 |  | Request access / NOC & outage window - existing system & iSiteCentral owner | 3d | 2027-02-16 | 2027-02-18 | APR-1650 | 138d | 0d |  |  |  |  | - | - | PA - Permits & Autho | 2 - Procurement & Co | Permit / Authority | Contractor | All | Integration | - | Applicability & dura | - | N | - |  |  |  |  |  |
| PRM-2620 |  | Owner NOC & agreed tie-in / outage window | 10d | 2027-02-21 | 2027-03-07 | PRM-2610 | 138d | 9d |  |  |  |  | - | - | PA - Permits & Autho | 2 - Procurement & Co | Permit / Authority | SAR | All | Integration | - | Applicability & dura | - | N | - |  |  |  |  |  |
|  | 1.3 | **ENGINEERING (E)** |  | 2027-01-05 | 2027-03-24 |  |  |  |  |  |  |  |  |  |  |  |  |  |  |  |  |  |  |  |  |  |  |  |  |  |
|  | 1.3.1 | **Survey & Assessment** |  | 2027-01-19 | 2027-01-27 |  |  |  |  |  |  |  |  |  |  |  |  |  |  |  |  |  |  |  |  |  |  |  |  |  |
| SRV-1210 |  | Existing system, power capacity & shelter assessment (incl. data correlation) | 5d | 2027-01-19 | 2027-01-25 | PRM-1120 | 18d | 0d | Field Works (Sun-Thu, 8h) | Cost Distribution [24780]; Systems Engineers [80 h] | 24,780 | 24,780 | - | B - Survey & Design | E - Engineering | 1 - Mobilization & D | Survey | Contractor | All | General | 06 | Planned (contractor) | - | N | - | Item 06: 20% = 24,780.00 | 24780.0 | 0.0 | 0.0 | 0.0 |
| SRV-1220 |  | Topographic survey, GPR utilities detection & dilapidation survey (5.5 km route) | 7d | 2027-01-19 | 2027-01-27 | PRM-1120 | 17d | 1d | Field Works (Sun-Thu, 8h) | Cost Distribution [162250]; Survey Crew [112 h] | 162,250 | 162,250 | - | B - Survey & Design | E - Engineering | 1 - Mobilization & D | Survey | Contractor | All | General | 05 | Planned (contractor) | - | N | - | Item 05: 100% = 162,250.00 | 129800.0 | 0.0 | 32450.0 | 0.0 |
|  | 1.3.2 | **Design & Engineering (Concept / Preliminary / Detailed-IFC)** |  | 2027-01-05 | 2027-03-01 |  |  |  |  |  |  |  |  |  |  |  |  |  |  |  |  |  |  |  |  |  |  |  |  |  |
|  | 1.3.2.1 | **Concept Design** |  | 2027-01-05 | 2027-01-21 |  |  |  |  |  |  |  |  |  |  |  |  |  |  |  |  |  |  |  |  |  |  |  |  |  |
|  | 1.3.2.1.1 | **Concept - Design** |  | 2027-01-05 | 2027-01-11 |  |  |  |  |  |  |  |  |  |  |  |  |  |  |  |  |  |  |  |  |  |  |  |  |  |
| DSN-1305 |  | Concept design - basis of design, route, system architecture & sizing (desktop, existing as-builts) | 5d | 2027-01-05 | 2027-01-11 | MOB-1010 | 16d | 0d |  | Cost Distribution [12390]; Design Engineers [160 h] | 12,390 | 12,390 | C - Concept | B - Survey & Design | E - Engineering | 1 - Mobilization & D | Design | Contractor | All | General | 06 | Planned (contractor) | - | N | - | Item 06: 10% = 12,390.00 | 12390.0 | 0.0 | 0.0 | 0.0 |
|  | 1.3.2.1.2 | **Concept - Submittal (Contractor)** |  | 2027-01-12 | 2027-01-12 |  |  |  |  |  |  |  |  |  |  |  |  |  |  |  |  |  |  |  |  |  |  |  |  |  |
| SUB-1305 |  | Concept design package - submit to SAR | 1d | 2027-01-12 | 2027-01-12 | DSN-1305 | 16d | 0d |  |  |  |  | C - Concept | - | E - Engineering | 1 - Mobilization & D | Submittal (Contracto | Contractor | All | General | - | Planned (contractor) | - | N | - |  |  |  |  |  |
|  | 1.3.2.1.3 | **Concept - SAR Approval** |  | 2027-01-13 | 2027-01-21 |  |  |  |  |  |  |  |  |  |  |  |  |  |  |  |  |  |  |  |  |  |  |  |  |  |
| APR-1305 |  | SAR review & approval - Concept design | 7d | 2027-01-13 | 2027-01-21 | SUB-1305 | 16d | 0d |  |  |  |  | C - Concept | - | E - Engineering | 1 - Mobilization & D | SAR Approval / Revie | SAR | All | General | - | Duration assumed - t | - | N | - |  |  |  |  |  |
|  | 1.3.2.2 | **Preliminary Design** |  | 2027-01-12 | 2027-02-01 |  |  |  |  |  |  |  |  |  |  |  |  |  |  |  |  |  |  |  |  |  |  |  |  |  |
|  | 1.3.2.2.1 | **Preliminary - Design** |  | 2027-01-12 | 2027-01-20 |  |  |  |  |  |  |  |  |  |  |  |  |  |  |  |  |  |  |  |  |  |  |  |  |  |
| DSN-1307 |  | Preliminary design - route & cable layout, power/shelter sizing, interfaces, quantity check | 7d | 2027-01-12 | 2027-01-20 | DSN-1305 | 16d | 0d |  | Cost Distribution [18585]; Design Engineers [224 h] | 18,585 | 18,585 | P - Preliminary | B - Survey & Design | E - Engineering | 1 - Mobilization & D | Design | Contractor | All | General | 06 | Planned (contractor) | - | N | - | Item 06: 15% = 18,585.00 | 18585.0 | 0.0 | 0.0 | 0.0 |
|  | 1.3.2.2.2 | **Preliminary - Submittal (Contractor)** |  | 2027-01-21 | 2027-01-21 |  |  |  |  |  |  |  |  |  |  |  |  |  |  |  |  |  |  |  |  |  |  |  |  |  |
| SUB-1307 |  | Preliminary design package - submit to SAR | 1d | 2027-01-21 | 2027-01-21 | DSN-1307 | 16d | 0d |  |  |  |  | P - Preliminary | - | E - Engineering | 1 - Mobilization & D | Submittal (Contracto | Contractor | All | General | - | Planned (contractor) | - | N | - |  |  |  |  |  |

| ID | WBS | Activity | Duration | Start | Finish | Predecessors | Total float | Free float | Resources | Cost | Actual cost | Design Stage | BoQ Section | EPC Phase | SoW Stage | Activity Category | Responsible | Section | System | BoQ Item | Basis | Risk Rank | Long Lead | LL No. | BoQ Mapping | Cost Engineering SAR | Cost Material SAR | Cost Labour SAR | Cost Indirect SAR |
| --- | --- | --- | --- | --- | --- | --- | --- | --- | --- | --- | --- | --- | --- | --- | --- | --- | --- | --- | --- | --- | --- | --- | --- | --- | --- | --- | --- | --- | --- |
|  | 1.3.2.2.3 | **Preliminary - SAR Approval** |  | 2027-01-24 | 2027-02-01 |  |  |  |  |  |  |  |  |  |  |  |  |  |  |  |  |  |  |  |  |  |  |  |  |
| APR-1307 |  | SAR review & approval - Preliminary design | 7d | 2027-01-24 | 2027-02-01 | SUB-1307, APR-1305 | 16d | 0d |  |  |  | P - Preliminary | - | E - Engineering | 1 - Mobilization & D | SAR Approval / Revie | SAR | All | General | - | Duration assumed - t | - | N | - |  |  |  |  |  |
|  | 1.3.2.3 | **Detailed Design / IFC** |  | 2027-01-21 | 2027-03-01 |  |  |  |  |  |  |  |  |  |  |  |  |  |  |  |  |  |  |  |  |  |  |  |  |
|  | 1.3.2.3.1 | **Detailed / IFC - Design** |  | 2027-01-21 | 2027-02-01 |  |  |  |  |  |  |  |  |  |  |  |  |  |  |  |  |  |  |  |  |  |  |  |  |
| DSN-1310 |  | Detailed design - IFC drawings, specifications & calculations | 8d | 2027-01-21 | 2027-02-01 | DSN-1307, SRV-1210 SS, SRV-1210 FF, SRV-1220 FF+2d, MGT-1090 | 16d | 0d | Cost Distribution [43365]; Design Engineers [256 h] | 43,365 | 43,365 | D - Detailed / IFC | B - Survey & Design | E - Engineering | 1 - Mobilization & D | Design | Contractor | All | General | 06 | Planned (contractor) | - | N | - | Item 06: 35% = 43,365.00 | 43365.0 | 0.0 | 0.0 | 0.0 |
|  | 1.3.2.3.2 | **Detailed / IFC - Submittal (Contractor)** |  | 2027-02-02 | 2027-02-23 |  |  |  |  |  |  |  |  |  |  |  |  |  |  |  |  |  |  |  |  |  |  |  |  |
| DSN-1320 |  | IFC package QA check & submission to SAR | 1d | 2027-02-02 | 2027-02-02 | DSN-1310, APR-1307 | 16d | 0d | Cost Distribution [24780] | 24,780 | 24,780 | D - Detailed / IFC | B - Survey & Design | E - Engineering | 1 - Mobilization & D | Submittal (Contracto | Contractor | All | General | 06 | Planned (contractor) | - | N | - | Item 06: 20% = 24,780.00 | 24780.0 | 0.0 | 0.0 | 0.0 |
| SUB-1570 |  | Address SAR comments & resubmit IFC package | 4d | 2027-02-17 | 2027-02-23 | APR-1560 | 16d | 0d |  |  |  | D - Detailed / IFC | - | E - Engineering | 2 - Procurement & Co | Submittal (Contracto | Contractor | All | General | - | Planned (contractor) | - | N | - |  |  |  |  |  |
|  | 1.3.2.3.3 | **Detailed / IFC - SAR Approval** |  | 2027-02-03 | 2027-03-01 |  |  |  |  |  |  |  |  |  |  |  |  |  |  |  |  |  |  |  |  |  |  |  |  |
| APR-1560 |  | SAR review - IFC design package | 10d | 2027-02-03 | 2027-02-16 | DSN-1320 | 16d | 0d |  |  |  | D - Detailed / IFC | - | E - Engineering | 2 - Procurement & Co | SAR Approval / Revie | SAR | All | General | - | Duration assumed - t | - | N | - |  |  |  |  |  |
| APR-1580 |  | SAR final approval - IFC package | 4d | 2027-02-24 | 2027-03-01 | SUB-1570 | 16d | 0d |  |  |  | D - Detailed / IFC | - | E - Engineering | 2 - Procurement & Co | SAR Approval / Revie | SAR | All | General | - | Duration assumed - t | - | N | - |  |  |  |  |  |
|  | 1.3.3 | **Other Engineering Submittals (Contractor)** |  | 2027-01-05 | 2027-03-15 |  |  |  |  |  |  |  |  |  |  |  |  |  |  |  |  |  |  |  |  |  |  |  |  |
| SUB-1410 |  | QA/QC Plan, HSE Plan & Project Execution Plan - prepare & submit | 5d | 2027-01-05 | 2027-01-11 | MOB-1010 | 50d | 0d |  |  |  | - | - | E - Engineering | 1 - Mobilization & D | Submittal (Contracto | Contractor | All | General | - | Requirement confirme | - | N | - |  |  |  |  |  |
| SUB-1420 |  | Method statements & ITPs (survey, trenching, cable laying, OTDR/splicing, track crossing, equipment) - prepare & submit | 8d | 2027-01-05 | 2027-01-14 | MOB-1010 | 37d | 0d |  |  |  | - | - | E - Engineering | 1 - Mobilization & D | Submittal (Contracto | Contractor | All | General | - | Requirement confirme | - | N | - |  |  |  |  |  |
| SUB-1490 |  | FAT procedures & test plans (TDR, cables, weather, comms, UPS, cloud hardware) | 6d | 2027-01-24 | 2027-01-31 | APR-1540 | 30d | 0d |  |  |  | - | - | E - Engineering | 1 - Mobilization & D | Submittal (Contracto | Contractor | All | General | - | Planned (contractor) | - | N | - |  |  |  |  |  |
| SUB-1470 |  | Cybersecurity (NCA ECC-1/CSCC-1/OTCC-1, SAR OT/ICS) & local-cloud architecture design package | 10d | 2027-01-26 | 2027-02-08 | SRV-1210, APR-1305 | 81d | 0d | Cost Distribution [169920] | 169,920 | 169,920 | - | E - Testing, Integra | E - Engineering | 1 - Mobilization & D | Submittal (Contracto | Contractor | All | Cyber | 23 | Planned (contractor) | - | N | - | Item 23: 30% = 169,920.00 | 135936.0 | 33984.0 | 0.0 | 0.0 |
| SUB-1480 |  | Interface Control Document - existing 1.5 km system & iSiteCentral | 8d | 2027-01-26 | 2027-02-04 | SRV-1210 | 138d | 0d |  |  |  | - | - | E - Engineering | 1 - Mobilization & D | Submittal (Contracto | Contractor | All | Integration | - | Planned (contractor) | - | N | - |  |  |  |  |  |
| SUB-1630 |  | Address SAR comments & resubmit cyber/cloud design | 3d | 2027-02-24 | 2027-02-28 | APR-1620 | 81d | 0d |  |  |  | - | - | E - Engineering | 2 - Procurement & Co | Submittal (Contracto | Contractor | All | Cyber | - | Planned (contractor) | - | N | - |  |  |  |  |  |
| SUB-1495 |  | SAT, commissioning & performance-validation procedures | 6d | 2027-03-02 | 2027-03-15 | APR-1580 | 130d | 0d |  |  |  | - | - | E - Engineering | 2 - Procurement & Co | Submittal (Contracto | Contractor | All | General | - | Planned (contractor) | - | N | - |  |  |  |  |  |
|  | 1.3.4 | **SAR Reviews & Approvals - Other Engineering** |  | 2027-01-12 | 2027-03-24 |  |  |  |  |  |  |  |  |  |  |  |  |  |  |  |  |  |  |  |  |  |  |  |  |
| APR-1510 |  | SAR review & approval - QA/QC, HSE & Execution Plans | 7d | 2027-01-12 | 2027-01-20 | SUB-1410 | 50d | 34d |  |  |  | - | - | E - Engineering | 1 - Mobilization & D | SAR Approval / Revie | SAR | All | General | - | Duration assumed - t | - | N | - |  |  |  |  |  |
| APR-1520 |  | SAR review & approval - method statements & ITPs | 7d | 2027-01-17 | 2027-01-25 | SUB-1420 | 37d | 0d |  |  |  | - | - | E - Engineering | 1 - Mobilization & D | SAR Approval / Revie | SAR | All | General | - | Duration assumed - t | - | N | - |  |  |  |  |  |
| APR-1660 |  | SAR review & approval - FAT procedures (SAR witness notice incl.) | 7d | 2027-02-01 | 2027-02-09 | SUB-1490 | 30d | 9d |  |  |  | - | - | E - Engineering | 1 - Mobilization & D | SAR Approval / Revie | SAR | All | General | - | Duration assumed - t | - | N | - |  |  |  |  |  |
| APR-1650 |  | SAR / system-owner review - Interface Control Document | 7d | 2027-02-07 | 2027-02-15 | SUB-1480 | 138d | 0d |  |  |  | - | - | E - Engineering | 2 - Procurement & Co | SAR Approval / Revie | SAR | All | Integration | - | Duration assumed - t | - | N | - |  |  |  |  |  |
| APR-1620 |  | SAR IT/OT & cybersecurity review - architecture design | 10d | 2027-02-09 | 2027-02-23 | SUB-1470 | 81d | 0d |  |  |  | - | - | E - Engineering | 2 - Procurement & Co | SAR Approval / Revie | SAR | All | Cyber | - | Duration assumed - t | - | N | - |  |  |  |  |  |
| APR-1640 |  | SAR final approval - cyber/cloud design | 3d | 2027-03-01 | 2027-03-03 | SUB-1630 | 81d | 0d |  |  |  | - | - | E - Engineering | 2 - Procurement & Co | SAR Approval / Revie | SAR | All | Cyber | - | Duration assumed - t | - | N | - |  |  |  |  |  |
| APR-1670 |  | SAR review & approval - SAT/commissioning procedures | 7d | 2027-03-16 | 2027-03-24 | SUB-1495 | 130d | 0d |  |  |  | - | - | E - Engineering | 2 - Procurement & Co | SAR Approval / Revie | SAR | All | General | - | Duration assumed - t | - | N | - |  |  |  |  |  |

| ID | WBS | Activity | Duration | Start | Finish | Predecessors | Total float | Free float | Calendar | Resources | Cost | Actual cost | Design Stage | BoQ Section | EPC Phase | SoW Stage | Activity Category | Responsible | Section | System | BoQ Item | Basis | Risk Rank | Long Lead | LL No. | BoQ Mapping | Cost Engineering SAR | Cost Material SAR | Cost Labour SAR | Cost Indirect SAR |
| --- | --- | --- | --- | --- | --- | --- | --- | --- | --- | --- | --- | --- | --- | --- | --- | --- | --- | --- | --- | --- | --- | --- | --- | --- | --- | --- | --- | --- | --- | --- |
|  | 1.4 | **PROCUREMENT (P)** |  | 2027-01-05 | 2027-05-05 |  |  |  |  |  |  |  |  |  |  |  |  |  |  |  |  |  |  |  |  |  |  |  |  |  |
|  | 1.4.1 | **Material Submittals (Contractor)** |  | 2027-01-05 | 2027-01-25 |  |  |  |  |  |  |  |  |  |  |  |  |  |  |  |  |  |  |  |  |  |  |  |  |  |
| SUB-1430 |  | Material submittal - DSS cable NZS-DSS-C02, 48-core FO cable, TDR coaxial cable | 5d | 2027-01-05 | 2027-01-11 | MOB-1010 | 0d |  |  |  |  |  | - | - | P - Procurement | 1 - Mobilization & D | Submittal (Contracto | Contractor | All | General | - | Planned (contractor) | - | N | - |  |  |  |  |  |
| SUB-1440 |  | Material submittal - TDR system, weather station, comms modules/SIM, UPS & electrical panels, cloud hardware | 6d | 2027-01-05 | 2027-01-12 | MOB-1010 | 30d | 0d |  |  |  |  | - | - | P - Procurement | 1 - Mobilization & D | Submittal (Contracto | Contractor | All | General | - | Planned (contractor) | - | N | - |  |  |  |  |  |
| SUB-1450 |  | Material submittal - FO closures, handholes/manholes, steel & rigid conduits, marker posts, sweet sand | 5d | 2027-01-05 | 2027-01-11 | MOB-1010 | 44d | 0d |  |  |  |  | - | - | P - Procurement | 1 - Mobilization & D | Submittal (Contracto | Contractor | All | General | - | Planned (contractor) | - | N | - |  |  |  |  |  |
| SUB-1535 |  | Address SAR comments & resubmit cable materials | 3d | 2027-01-21 | 2027-01-25 | APR-1530 | 0d |  |  |  |  |  | - | - | P - Procurement | 1 - Mobilization & D | Submittal (Contracto | Contractor | All | General | - | Planned (contractor) | - | N | - |  |  |  |  |  |
|  | 1.4.2 | **SAR Material Approvals** |  | 2027-01-12 | 2027-01-28 |  |  |  |  |  |  |  |  |  |  |  |  |  |  |  |  |  |  |  |  |  |  |  |  |  |
| APR-1530 |  | SAR review - cable materials (DSS, FO, TDR coax) | 7d | 2027-01-12 | 2027-01-20 | SUB-1430 | 0d |  |  |  |  |  | - | - | P - Procurement | 1 - Mobilization & D | SAR Approval / Revie | SAR | All | General | - | Duration assumed - t | - | N | - |  |  |  |  |  |
| APR-1550 |  | SAR review & approval - civil materials (closures, handholes, conduits, markers, sand) | 5d | 2027-01-12 | 2027-01-18 | SUB-1450 | 44d | 0d |  |  |  |  | - | - | P - Procurement | 1 - Mobilization & D | SAR Approval / Revie | SAR | All | General | - | Duration assumed - t | - | N | - |  |  |  |  |  |
| APR-1540 |  | SAR review & approval - equipment materials (TDR, weather, comms, UPS/panels, cloud HW) | 7d | 2027-01-13 | 2027-01-21 | SUB-1440 | 30d | 0d |  |  |  |  | - | - | P - Procurement | 1 - Mobilization & D | SAR Approval / Revie | SAR | All | General | - | Duration assumed - t | - | N | - |  |  |  |  |  |
| APR-1536 |  | SAR final approval - cable materials | 3d | 2027-01-26 | 2027-01-28 | SUB-1535 | 0d |  |  |  |  |  | - | - | P - Procurement | 1 - Mobilization & D | SAR Approval / Revie | SAR | All | General | - | Duration assumed - t | - | N | - |  |  |  |  |  |
|  | 1.4.3 | **LONG-LEAD ITEMS (LL) - PO, Manufacture, FAT, Shipping, Customs & Delivery** |  | 2027-01-19 | 2027-05-05 |  |  |  |  |  |  |  |  |  |  |  |  |  |  |  |  |  |  |  |  |  |  |  |  |  |
|  | 1.4.3.1 | **LL-01 DSS cable NZS-DSS-C02** |  | 2027-01-31 | 2027-05-02 |  |  |  |  |  |  |  |  |  |  |  |  |  |  |  |  |  |  |  |  |  |  |  |  |  |
| PRC-DSS10 |  | [LL-01] Place PO & supplier kick-off - DSS cable NZS-DSS-C02 (5,500 LM) | 3d | 2027-01-31 | 2027-02-02 | APR-1536 | 0d |  |  |  |  |  | - | - | P - Procurement | 1 - Mobilization & D | Procurement | Supplier | All | DSS | - | Planned (contractor) | - | Y | LL-01 |  |  |  |  |  |
| PRC-DSS20 |  | [LL-01] Manufacture / supply - DSS cable NZS-DSS-C02 (5,500 LM) | 56d | 2027-02-03 | 2027-03-30 | PRC-DSS10 | 0d |  | Procurement & Shipping (7-day, 8h) | Cost Distribution [352407] | 352,407 | 352,407 | - | C - Materials, Civil | P - Procurement | 2 - Procurement & Co | Procurement | Supplier | All | DSS | 09 | Duration assumed - t | - | Y | LL-01 | Item 09: 60% = 352,407.00 | 0.0 | 229064.55 | 123342.45 | 0.0 |
| FAT-DSS |  | [LL-01] FAT at manufacturer - DSS cable NZS-DSS-C02 (5,500 LM) | 2d | 2027-03-31 | 2027-04-01 | PRC-DSS20, APR-1660 | 0d |  | Procurement & Shipping (7-day, 8h) | Cost Distribution [5310] | 5,310 | 5,310 | - | F - Documentation, T | P - Procurement | 2 - Procurement & Co | FAT | Supplier | All | DSS | 27 | Planned (contractor) | - | Y | LL-01 | Item 27: 3% = 5,310.00 | 2655.0 | 0.0 | 2655.0 | 0.0 |
| PRC-DSS30 |  | [LL-01] Shipping / import - DSS cable NZS-DSS-C02 (5,500 LM) | 21d | 2027-04-02 | 2027-04-22 | FAT-DSS | 0d |  | Procurement & Shipping (7-day, 8h) |  |  |  | - | - | P - Procurement | 2 - Procurement & Co | Procurement | Supplier | All | DSS | - | Duration assumed - t | - | Y | LL-01 |  |  |  |  |  |
| PRC-DSS40 |  | [LL-01] Customs clearance & SABER conformity - DSS cable NZS-DSS-C02 (5,500 LM) | 7d | 2027-04-23 | 2027-04-29 | PRC-DSS30 | 0d |  | Procurement & Shipping (7-day, 8h) |  |  |  | - | - | P - Procurement | 2 - Procurement & Co | Procurement | Authority | All | DSS | - | Duration assumed - t | - | Y | LL-01 |  |  |  |  |  |
| PRC-DSS50 |  | [LL-01] Delivery to site (Heet) - DSS cable NZS-DSS-C02 (5,500 LM) | 3d | 2027-04-30 | 2027-05-02 | PRC-DSS40 | 0d |  | Procurement & Shipping (7-day, 8h) |  |  |  | - | - | P - Procurement | 2 - Procurement & Co | Procurement | Supplier | All | DSS | - | Planned (contractor) | - | Y | LL-01 |  |  |  |  |  |
|  | 1.4.3.2 | **LL-02 48-core FO cable (DAS)** |  | 2027-01-31 | 2027-04-04 |  |  |  |  |  |  |  |  |  |  |  |  |  |  |  |  |  |  |  |  |  |  |  |  |  |
| PRC-FO10 |  | [LL-02] Place PO & supplier kick-off - Outdoor 48-core FO cable - DAS (5,500 LM) | 3d | 2027-01-31 | 2027-02-02 | APR-1536 | 22d | 0d |  |  |  |  | - | - | P - Procurement | 1 - Mobilization & D | Procurement | Supplier | All | DAS | - | Planned (contractor) | - | Y | LL-02 |  |  |  |  |  |
| PRC-FO20 |  | [LL-02] Manufacture / supply - Outdoor 48-core FO cable - DAS (5,500 LM) | 35d | 2027-02-03 | 2027-03-09 | PRC-FO10 | 36d | 0d | Procurement & Shipping (7-day, 8h) | Cost Distribution [398356] | 398,356.2 | 398,356.2 | - | C - Materials, Civil | P - Procurement | 2 - Procurement & Co | Procurement | Supplier | All | DAS | 08 | Duration assumed - t | - | Y | LL-02 | Item 08: 60% = 398,356.20 | 0.0 | 239013.72 | 159342.48 | 0.0 |
| FAT-FO |  | [LL-02] FAT at manufacturer - Outdoor 48-core FO cable - DAS (5,500 LM) | 2d | 2027-03-10 | 2027-03-11 | PRC-FO20, APR-1660 | 36d | 0d | Procurement & Shipping (7-day, 8h) | Cost Distribution [5310] | 5,310 | 5,310 | - | F - Documentation, T | P - Procurement | 2 - Procurement & Co | FAT | Supplier | All | DAS | 27 | Planned (contractor) | - | Y | LL-02 | Item 27: 3% = 5,310.00 | 2655.0 | 0.0 | 2655.0 | 0.0 |
| PRC-FO30 |  | [LL-02] Shipping / import - Outdoor 48-core FO cable - DAS (5,500 LM) | 14d | 2027-03-12 | 2027-03-25 | FAT-FO | 36d | 0d | Procurement & Shipping (7-day, 8h) |  |  |  | - | - | P - Procurement | 2 - Procurement & Co | Procurement | Supplier | All | DAS | - | Duration assumed - t | - | Y | LL-02 |  |  |  |  |  |
| PRC-FO40 |  | [LL-02] Customs clearance & SABER conformity - Outdoor 48-core FO cable - DAS (5,500 LM) | 7d | 2027-03-26 | 2027-04-01 | PRC-FO30 | 36d | 0d | Procurement & Shipping (7-day, 8h) |  |  |  | - | - | P - Procurement | 2 - Procurement & Co | Procurement | Authority | All | DAS | - | Duration assumed - t | - | Y | LL-02 |  |  |  |  |  |
| PRC-FO50 |  | [LL-02] Delivery to site (Heet) - Outdoor 48-core FO cable - DAS (5,500 LM) | 3d | 2027-04-02 | 2027-04-04 | PRC-FO40 | 36d |  | Procurement & Shipping (7-day, 8h) |  |  |  | - | - | P - Procurement | 2 - Procurement & Co | Procurement | Supplier | All | DAS | - | Planned (contractor) | - | Y | LL-02 |  |  |  |  |  |

| ID | WBS | Activity | Duration | Start | Finish | Predecessors | Total float | Free float | Calendar | Resources | Cost | Actual cost | Design Stage | BoQ Section | EPC Phase | SoW Stage | Activity Category | Responsible | Section | System | BoQ Item | Basis | Risk Rank | Long Lead | LL No. | BoQ Mapping | Cost Engineering SAR | Cost Material SAR | Cost Labour SAR | Cost Indirect SAR |
| --- | --- | --- | --- | --- | --- | --- | --- | --- | --- | --- | --- | --- | --- | --- | --- | --- | --- | --- | --- | --- | --- | --- | --- | --- | --- | --- | --- | --- | --- | --- |
|  | 1.4.3.3 | **LL-03 TDR coaxial cable** |  | 2027-01-31 | 2027-03-28 |  |  |  |  |  |  |  |  |  |  |  |  |  |  |  |  |  |  |  |  |  |  |  |  |  |
| PRC-TDRC10 |  | [LL-03] Place PO & supplier kick-off - TDR coaxial cable (5,500 LM) | 3d | 2027-01-31 | 2027-02-02 | APR-1536 | 39d | 0d |  |  |  |  | - | - | P - Procurement | 1 - Mobilization & D | Procurement | Supplier | All | TDR | - | Planned (contractor) | - | Y | LL-03 |  |  |  |  |  |
| PRC-TDRC20 |  | [LL-03] Manufacture / supply - TDR coaxial cable (5,500 LM) | 28d | 2027-02-03 | 2027-03-02 | PRC-TDRC10 | 62d | 0d | Procurement & Shipping (7-day, 8h) | Cost Distribution [352407] | 352,407 | 352,407 | - | C - Materials, Civil | P - Procurement | 2 - Procurement & Co | Procurement | Supplier | All | TDR | 07 | Duration assumed - t | - | Y | LL-03 | Item 07: 60% = 352,407.00 | 0.0 | 211444.2 | 140962.8 | 0.0 |
| FAT-TDRC |  | [LL-03] FAT at manufacturer - TDR coaxial cable (5,500 LM) | 2d | 2027-03-03 | 2027-03-04 | PRC-TDRC20, APR-1660 | 62d | 0d | Procurement & Shipping (7-day, 8h) | Cost Distribution [5310] | 5,310 | 5,310 | - | F - Documentation, T | P - Procurement | 2 - Procurement & Co | FAT | Supplier | All | TDR | 27 | Planned (contractor) | - | Y | LL-03 | Item 27: 3% = 5,310.00 | 2655.0 | 0.0 | 2655.0 | 0.0 |
| PRC-TDRC30 |  | [LL-03] Shipping / import - TDR coaxial cable (5,500 LM) | 14d | 2027-03-05 | 2027-03-18 | FAT-TDRC | 62d | 0d | Procurement & Shipping (7-day, 8h) |  |  |  | - | - | P - Procurement | 2 - Procurement & Co | Procurement | Supplier | All | TDR | - | Duration assumed - t | - | Y | LL-03 |  |  |  |  |  |
| PRC-TDRC40 |  | [LL-03] Customs clearance & SABER conformity - TDR coaxial cable (5,500 LM) | 7d | 2027-03-19 | 2027-03-25 | PRC-TDRC30 | 62d | 0d | Procurement & Shipping (7-day, 8h) |  |  |  | - | - | P - Procurement | 2 - Procurement & Co | Procurement | Authority | All | TDR | - | Duration assumed - t | - | Y | LL-03 |  |  |  |  |  |
| PRC-TDRC50 |  | [LL-03] Delivery to site (Heet) - TDR coaxial cable (5,500 LM) | 3d | 2027-03-26 | 2027-03-28 | PRC-TDRC40 | 62d |  | Procurement & Shipping (7-day, 8h) |  |  |  | - | - | P - Procurement | 2 - Procurement & Co | Procurement | Supplier | All | TDR | - | Planned (contractor) | - | Y | LL-03 |  |  |  |  |  |
|  | 1.4.3.4 | **LL-04 TDR system** |  | 2027-01-24 | 2027-05-05 |  |  |  |  |  |  |  |  |  |  |  |  |  |  |  |  |  |  |  |  |  |  |  |  |  |
| PRC-TDR10 |  | [LL-04] Place PO & supplier kick-off - TDR system (interrogator, antenna & accessories) | 3d | 2027-01-24 | 2027-01-26 | APR-1540 | 85d | 0d |  |  |  |  | - | - | P - Procurement | 1 - Mobilization & D | Procurement | Supplier | All | TDR | - | Planned (contractor) | - | Y | LL-04 |  |  |  |  |  |
| PRC-TDR20 |  | [LL-04] Manufacture / supply - TDR system (interrogator, antenna & accessories) | 70d | 2027-01-27 | 2027-04-06 | PRC-TDR10 | 132d | 0d | Procurement & Shipping (7-day, 8h) | Cost Distribution [247800] | 247,800 | 247,800 | - | D - TDR System, Equi | P - Procurement | 1 - Mobilization & D | Procurement | Supplier | All | TDR | 15 | Duration assumed - t | - | Y | LL-04 | Item 15: 70% = 247,800.00 | 12390.0 | 198240.0 | 37170.0 | 0.0 |
| FAT-TDR |  | [LL-04] FAT at manufacturer - TDR system (interrogator, antenna & accessories) | 5d | 2027-04-07 | 2027-04-11 | PRC-TDR20, APR-1660 | 132d | 0d | Procurement & Shipping (7-day, 8h) | Cost Distribution [26550] | 26,550 | 26,550 | - | F - Documentation, T | P - Procurement | 2 - Procurement & Co | FAT | Supplier | All | TDR | 27 | Planned (contractor) | - | Y | LL-04 | Item 27: 15% = 26,550.00 | 13275.0 | 0.0 | 13275.0 | 0.0 |
| PRC-TDR30 |  | [LL-04] Shipping / import - TDR system (interrogator, antenna & accessories) | 14d | 2027-04-12 | 2027-04-25 | FAT-TDR | 132d | 0d | Procurement & Shipping (7-day, 8h) |  |  |  | - | - | P - Procurement | 2 - Procurement & Co | Procurement | Supplier | All | TDR | - | Duration assumed - t | - | Y | LL-04 |  |  |  |  |  |
| PRC-TDR40 |  | [LL-04] Customs clearance & SABER conformity - TDR system (interrogator, antenna & accessories) | 7d | 2027-04-26 | 2027-05-02 | PRC-TDR30 | 132d | 0d | Procurement & Shipping (7-day, 8h) |  |  |  | - | - | P - Procurement | 2 - Procurement & Co | Procurement | Authority | All | TDR | - | Duration assumed - t | - | Y | LL-04 |  |  |  |  |  |
| PRC-TDR50 |  | [LL-04] Delivery to site (Heet) - TDR system (interrogator, antenna & accessories) | 3d | 2027-05-03 | 2027-05-05 | PRC-TDR40 | 132d | 0d | Procurement & Shipping (7-day, 8h) |  |  |  | - | - | P - Procurement | 2 - Procurement & Co | Procurement | Supplier | All | TDR | - | Planned (contractor) | - | Y | LL-04 |  |  |  |  |  |
|  | 1.4.3.5 | **LL-05 Weather station sensors** |  | 2027-01-24 | 2027-03-28 |  |  |  |  |  |  |  |  |  |  |  |  |  |  |  |  |  |  |  |  |  |  |  |  |  |
| PRC-WX10 |  | [LL-05] Place PO & supplier kick-off - Weather station sensors | 3d | 2027-01-24 | 2027-01-26 | APR-1540 | 116d | 0d |  |  |  |  | - | - | P - Procurement | 1 - Mobilization & D | Procurement | Supplier | All | Weather | - | Planned (contractor) | - | Y | LL-05 |  |  |  |  |  |
| PRC-WX20 |  | [LL-05] Manufacture / supply - Weather station sensors | 35d | 2027-01-27 | 2027-03-02 | PRC-WX10 | 175d | 0d | Procurement & Shipping (7-day, 8h) | Cost Distribution [37170] | 37,170 | 37,170 | - | D - TDR System, Equi | P - Procurement | 1 - Mobilization & D | Procurement | Supplier | All | Weather | 16 | Duration assumed - t | - | Y | LL-05 | Item 16: 70% = 37,170.00 | 1858.5 | 27877.5 | 7434.0 | 0.0 |
| FAT-WX |  | [LL-05] FAT at manufacturer - Weather station sensors | 2d | 2027-03-03 | 2027-03-04 | PRC-WX20, APR-1660 | 175d | 0d | Procurement & Shipping (7-day, 8h) | Cost Distribution [5310] | 5,310 | 5,310 | - | F - Documentation, T | P - Procurement | 2 - Procurement & Co | FAT | Supplier | All | Weather | 27 | Planned (contractor) | - | Y | LL-05 | Item 27: 3% = 5,310.00 | 2655.0 | 0.0 | 2655.0 | 0.0 |
| PRC-WX30 |  | [LL-05] Shipping / import - Weather station sensors | 14d | 2027-03-05 | 2027-03-18 | FAT-WX | 175d | 0d | Procurement & Shipping (7-day, 8h) |  |  |  | - | - | P - Procurement | 2 - Procurement & Co | Procurement | Supplier | All | Weather | - | Duration assumed - t | - | Y | LL-05 |  |  |  |  |  |
| PRC-WX40 |  | [LL-05] Customs clearance & SABER conformity - Weather station sensors | 7d | 2027-03-19 | 2027-03-25 | PRC-WX30 | 175d | 0d | Procurement & Shipping (7-day, 8h) |  |  |  | - | - | P - Procurement | 2 - Procurement & Co | Procurement | Authority | All | Weather | - | Duration assumed - t | - | Y | LL-05 |  |  |  |  |  |
| PRC-WX50 |  | [LL-05] Delivery to site (Heet) - Weather station sensors | 3d | 2027-03-26 | 2027-03-28 | PRC-WX40 | 175d | 24d | Procurement & Shipping (7-day, 8h) |  |  |  | - | - | P - Procurement | 2 - Procurement & Co | Procurement | Supplier | All | Weather | - | Planned (contractor) | - | Y | LL-05 |  |  |  |  |  |
|  | 1.4.3.6 | **LL-06 Communication modules & SIM** |  | 2027-01-24 | 2027-03-17 |  |  |  |  |  |  |  |  |  |  |  |  |  |  |  |  |  |  |  |  |  |  |  |  |  |
| PRC-COM10 |  | [LL-06] Place PO & supplier kick-off - Communication modules & SIM hardware | 3d | 2027-01-24 | 2027-01-26 | APR-1540 | 124d | 0d |  |  |  |  | - | - | P - Procurement | 1 - Mobilization & D | Procurement | Supplier | All | Comms | - | Planned (contractor) | - | Y | LL-06 |  |  |  |  |  |
| PRC-COM20 |  | [LL-06] Manufacture / supply - Communication modules & SIM hardware | 28d | 2027-01-27 | 2027-02-23 | PRC-COM10 | 187d | 0d | Procurement & Shipping (7-day, 8h) | Cost Distribution [53690] | 53,690 | 53,690 | - | D - TDR System, Equi | P - Procurement | 1 - Mobilization & D | Procurement | Supplier | All | Comms | 17 | Duration assumed - t | - | Y | LL-06 | Item 17: 70% = 53,690.00 | 5369.0 | 37583.0 | 10738.0 | 0.0 |
| FAT-COM |  | [LL-06] FAT at manufacturer - Communication modules & SIM hardware | 2d | 2027-02-24 | 2027-02-25 | PRC-COM20, APR-1660 | 187d | 0d | Procurement & Shipping (7-day, 8h) | Cost Distribution [5310] | 5,310 | 5,310 | - | F - Documentation, T | P - Procurement | 2 - Procurement & Co | FAT | Supplier | All | Comms | 27 | Planned (contractor) | - | Y | LL-06 | Item 27: 3% = 5,310.00 | 2655.0 | 0.0 | 2655.0 | 0.0 |
| PRC-COM30 |  | [LL-06] Shipping / import - Communication modules & SIM hardware | 10d | 2027-02-26 | 2027-03-07 | FAT-COM | 187d | 0d | Procurement & Shipping (7-day, 8h) |  |  |  | - | - | P - Procurement | 2 - Procurement & Co | Procurement | Supplier | All | Comms | - | Duration assumed - t | - | Y | LL-06 |  |  |  |  |  |
| PRC-COM40 |  | [LL-06] Customs clearance & SABER conformity - Communication modules & SIM hardware | 7d | 2027-03-08 | 2027-03-14 | PRC-COM30 | 187d | 0d | Procurement & Shipping (7-day, 8h) |  |  |  | - | - | P - Procurement | 2 - Procurement & Co | Procurement | Authority | All | Comms | - | Duration assumed - t | - | Y | LL-06 |  |  |  |  |  |
| PRC-COM50 |  | [LL-06] Delivery to site (Heet) - Communication modules & SIM hardware | 3d | 2027-03-15 | 2027-03-17 | PRC-COM40 | 187d | 35d | Procurement & Shipping (7-day, 8h) |  |  |  | - | - | P - Procurement | 2 - Procurement & Co | Procurement | Supplier | All | Comms | - | Planned (contractor) | - | Y | LL-06 |  |  |  |  |  |

| ID | WBS | Activity | Duration | Start | Finish | Predecessors | Total float | Free float | Calendar | Resources | Cost | Actual cost | Design Stage | BoQ Section | EPC Phase | SoW Stage | Activity Category | Responsible | Section | System | BoQ Item | Basis | Risk Rank | Long Lead | LL No. | BoQ Mapping | Cost Engineering SAR | Cost Material SAR | Cost Labour SAR | Cost Indirect SAR |
| --- | --- | --- | --- | --- | --- | --- | --- | --- | --- | --- | --- | --- | --- | --- | --- | --- | --- | --- | --- | --- | --- | --- | --- | --- | --- | --- | --- | --- | --- | --- |
|  | 1.4.3.7 | **LL-07 UPS & electrical panels** |  | 2027-01-24 | 2027-04-10 |  |  |  |  |  |  |  |  |  |  |  |  |  |  |  |  |  |  |  |  |  |  |  |  |  |
| PRC-PWR10 |  | [LL-07] Place PO & supplier kick-off - UPS (min. 4 h) & electrical panels | 3d | 2027-01-24 | 2027-01-26 | APR-1540 | 93d | 0d |  |  |  |  | - | - | P - Procurement | 1 - Mobilization & D | Procurement | Supplier | All | Power | - | Planned (contractor) | - | Y | LL-07 |  |  |  |  |  |
| PRC-PWR20 |  | [LL-07] Manufacture / supply - UPS (min. 4 h) & electrical panels | 56d | 2027-01-27 | 2027-03-23 | PRC-PWR10 | 144d | 0d | Procurement & Shipping (7-day, 8h) | Cost Distribution [18880] | 18,880 | 18,880 | - | D - TDR System, Equi | P - Procurement | 1 - Mobilization & D | Procurement | Supplier | All | Power | 18 | Duration assumed - t | - | Y | LL-07 | Item 18: 50% = 18,880.00 | 944.0 | 11328.0 | 6608.0 | 0.0 |
| FAT-PWR |  | [LL-07] FAT at manufacturer - UPS (min. 4 h) & electrical panels | 3d | 2027-03-24 | 2027-03-26 | PRC-PWR20, APR-1660 | 144d | 0d | Procurement & Shipping (7-day, 8h) | Cost Distribution [8850] | 8,850 | 8,850 | - | F - Documentation, T | P - Procurement | 2 - Procurement & Co | FAT | Supplier | All | Power | 27 | Planned (contractor) | - | Y | LL-07 | Item 27: 5% = 8,850.00 | 4425.0 | 0.0 | 4425.0 | 0.0 |
| PRC-PWR30 |  | [LL-07] Shipping / import - UPS (min. 4 h) & electrical panels | 7d | 2027-03-27 | 2027-04-02 | FAT-PWR | 144d | 0d | Procurement & Shipping (7-day, 8h) |  |  |  | - | - | P - Procurement | 2 - Procurement & Co | Procurement | Supplier | All | Power | - | Duration assumed - t | - | Y | LL-07 |  |  |  |  |  |
| PRC-PWR40 |  | [LL-07] Customs clearance & SABER conformity - UPS (min. 4 h) & electrical panels | 5d | 2027-04-03 | 2027-04-07 | PRC-PWR30 | 144d | 0d | Procurement & Shipping (7-day, 8h) |  |  |  | - | - | P - Procurement | 2 - Procurement & Co | Procurement | Authority | All | Power | - | Duration assumed - t | - | Y | LL-07 |  |  |  |  |  |
| PRC-PWR50 |  | [LL-07] Delivery to site (Heet) - UPS (min. 4 h) & electrical panels | 3d | 2027-04-08 | 2027-04-10 | PRC-PWR40 | 144d | 0d | Procurement & Shipping (7-day, 8h) |  |  |  | - | - | P - Procurement | 2 - Procurement & Co | Procurement | Supplier | All | Power | - | Planned (contractor) | - | Y | LL-07 |  |  |  |  |  |
|  | 1.4.3.8 | **LL-08 Local-cloud hardware (KSA)** |  | 2027-03-04 | 2027-05-04 |  |  |  |  |  |  |  |  |  |  |  |  |  |  |  |  |  |  |  |  |  |  |  |  |  |
| PRC-CLD10 |  | [LL-08] Place PO & supplier kick-off - Local-cloud hardware & licences (KSA hosted) | 3d | 2027-03-04 | 2027-03-14 | APR-1540, APR-1640 | 81d | 0d |  |  |  |  | - | - | P - Procurement | 2 - Procurement & Co | Procurement | Supplier | All | Cloud | - | Planned (contractor) | - | Y | LL-08 |  |  |  |  |  |
| PRC-CLD20 |  | [LL-08] Manufacture / supply - Local-cloud hardware & licences (KSA hosted) | 28d | 2027-03-15 | 2027-04-11 | PRC-CLD10 | 119d | 0d | Procurement & Shipping (7-day, 8h) | Cost Distribution [202960] | 202,960 | 202,960 | - | E - Testing, Integra | P - Procurement | 2 - Procurement & Co | Procurement | Supplier | All | Cloud | 22 | Duration assumed - t | - | Y | LL-08 | Item 22: 40% = 202,960.00 | 40592.0 | 162368.0 | 0.0 | 0.0 |
| FAT-CLD |  | [LL-08] FAT at manufacturer - Local-cloud hardware & licences (KSA hosted) | 3d | 2027-04-12 | 2027-04-14 | PRC-CLD20, APR-1660 | 119d | 0d | Procurement & Shipping (7-day, 8h) | Cost Distribution [8850] | 8,850 | 8,850 | - | F - Documentation, T | P - Procurement | 2 - Procurement & Co | FAT | Supplier | All | Cloud | 27 | Planned (contractor) | - | Y | LL-08 | Item 27: 5% = 8,850.00 | 4425.0 | 0.0 | 4425.0 | 0.0 |
| PRC-CLD30 |  | [LL-08] Shipping / import - Local-cloud hardware & licences (KSA hosted) | 10d | 2027-04-15 | 2027-04-24 | FAT-CLD | 119d | 0d | Procurement & Shipping (7-day, 8h) |  |  |  | - | - | P - Procurement | 2 - Procurement & Co | Procurement | Supplier | All | Cloud | - | Duration assumed - t | - | Y | LL-08 |  |  |  |  |  |
| PRC-CLD40 |  | [LL-08] Customs clearance & SABER conformity - Local-cloud hardware & licences (KSA hosted) | 7d | 2027-04-25 | 2027-05-01 | PRC-CLD30 | 119d | 0d | Procurement & Shipping (7-day, 8h) |  |  |  | - | - | P - Procurement | 2 - Procurement & Co | Procurement | Authority | All | Cloud | - | Duration assumed - t | - | Y | LL-08 |  |  |  |  |  |
| PRC-CLD50 |  | [LL-08] Delivery to site (Heet) - Local-cloud hardware & licences (KSA hosted) | 3d | 2027-05-02 | 2027-05-04 | PRC-CLD40 | 119d | 0d | Procurement & Shipping (7-day, 8h) |  |  |  | - | - | P - Procurement | 2 - Procurement & Co | Procurement | Supplier | All | Cloud | - | Planned (contractor) | - | Y | LL-08 |  |  |  |  |  |
|  | 1.4.3.9 | **LL-09 FO closures & accessories** |  | 2027-01-19 | 2027-03-14 |  |  |  |  |  |  |  |  |  |  |  |  |  |  |  |  |  |  |  |  |  |  |  |  |  |
| PRC-CLS10 |  | [LL-09] Place PO & supplier kick-off - FO closures, splice trays, connectors & pigtails | 3d | 2027-01-19 | 2027-01-21 | APR-1550 | 44d | 0d |  |  |  |  | - | - | P - Procurement | 1 - Mobilization & D | Procurement | Supplier | All | DAS | - | Planned (contractor) | - | Y | LL-09 |  |  |  |  |  |
| PRC-CLS20 |  | [LL-09] Manufacture / supply - FO closures, splice trays, connectors & pigtails | 28d | 2027-01-22 | 2027-02-18 | PRC-CLS10 | 69d | 0d | Procurement & Shipping (7-day, 8h) | Cost Distribution [118236] | 118,236 | 118,236 | - | C - Materials, Civil | P - Procurement | 1 - Mobilization & D | Procurement | Supplier | All | DAS | 11 | Duration assumed - t | - | Y | LL-09 | Item 11: 60% = 118,236.00 | 0.0 | 82765.2 | 35470.8 | 0.0 |
| PRC-CLS30 |  | [LL-09] Shipping / import - FO closures, splice trays, connectors & pigtails | 14d | 2027-02-19 | 2027-03-04 | PRC-CLS20 | 69d | 0d | Procurement & Shipping (7-day, 8h) |  |  |  | - | - | P - Procurement | 2 - Procurement & Co | Procurement | Supplier | All | DAS | - | Duration assumed - t | - | Y | LL-09 |  |  |  |  |  |
| PRC-CLS40 |  | [LL-09] Customs clearance & SABER conformity - FO closures, splice trays, connectors & pigtails | 7d | 2027-03-05 | 2027-03-11 | PRC-CLS30 | 69d | 0d | Procurement & Shipping (7-day, 8h) |  |  |  | - | - | P - Procurement | 2 - Procurement & Co | Procurement | Authority | All | DAS | - | Duration assumed - t | - | Y | LL-09 |  |  |  |  |  |
| PRC-CLS50 |  | [LL-09] Delivery to site (Heet) - FO closures, splice trays, connectors & pigtails | 3d | 2027-03-12 | 2027-03-14 | PRC-CLS40 | 69d |  | Procurement & Shipping (7-day, 8h) |  |  |  | - | - | P - Procurement | 2 - Procurement & Co | Procurement | Supplier | All | DAS | - | Planned (contractor) | - | Y | LL-09 |  |  |  |  |  |
|  | 1.4.4 | **Standard / Local Items - PO, Supply & Delivery (handholes, conduits, marker posts, sweet sand)** |  | 2027-01-19 | 2027-02-14 |  |  |  |  |  |  |  |  |  |  |  |  |  |  |  |  |  |  |  |  |  |  |  |  |  |
| PRC-CND10 |  | Place PO & supplier kick-off - Steel & rigid conduits | 3d | 2027-01-19 | 2027-01-21 | APR-1550 | 51d | 0d |  |  |  |  | - | - | P - Procurement | 1 - Mobilization & D | Procurement | Supplier | All | Civil | - | Planned (contractor) | - | N | - |  |  |  |  |  |
| PRC-HH10 |  | Place PO & supplier kick-off - Handholes & manholes (precast) | 3d | 2027-01-19 | 2027-01-21 | APR-1550 | 46d | 0d |  |  |  |  | - | - | P - Procurement | 1 - Mobilization & D | Procurement | Supplier | All | Civil | - | Planned (contractor) | - | N | - |  |  |  |  |  |
| PRC-MRK10 |  | Place PO & supplier kick-off - Marker posts, warning tape & route markers | 3d | 2027-01-19 | 2027-01-21 | APR-1550 | 165d | 0d |  |  |  |  | - | - | P - Procurement | 1 - Mobilization & D | Procurement | Supplier | All | Civil | - | Planned (contractor) | - | N | - |  |  |  |  |  |
| PRC-SND10 |  | Arrange sweet-sand source, approval & stockpile at site | 7d | 2027-01-19 | 2027-01-25 | APR-1550 | 79d | 57d | Procurement & Shipping (7-day, 8h) |  |  |  | - | - | P - Procurement | 1 - Mobilization & D | Procurement | Supplier | All | Civil | - | Planned (contractor) | - | N | - |  |  |  |  |  |
| PRC-CND20 |  | Manufacture / supply - Steel & rigid conduits | 14d | 2027-01-22 | 2027-02-04 | PRC-CND10 | 80d | 0d | Procurement & Shipping (7-day, 8h) | Cost Distribution [74403.7] | 74,403.72 | 74,403.72 | - | C - Materials, Civil | P - Procurement | 1 - Mobilization & D | Procurement | Supplier | All | Civil | 13 | Duration assumed - t | - | N | - | Item 13: 60% = 74,403.72 | 0.0 | 40922.05 | 33481.67 | 0.0 |
| PRC-HH20 |  | Manufacture / supply - Handholes & manholes (precast) | 21d | 2027-01-22 | 2027-02-11 | PRC-HH10 | 73d | 0d | Procurement & Shipping (7-day, 8h) | Cost Distribution [95730.1] | 95,730.1 | 95,730.1 | - | C - Materials, Civil | P - Procurement | 1 - Mobilization & D | Procurement | Supplier | All | Civil | 12 | Duration assumed - t | - | N | - | Item 12: 55% = 95,730.10 | 0.0 | 57438.06 | 38292.04 | 0.0 |
| PRC-MRK20 |  | Manufacture / supply - Marker posts, warning tape & route markers | 14d | 2027-01-22 | 2027-02-04 | PRC-MRK10 | 244d | 0d | Procurement & Shipping (7-day, 8h) | Cost Distribution [17700] | 17,700 | 17,700 | - | C - Materials, Civil | P - Procurement | 1 - Mobilization & D | Procurement | Supplier | All | Civil | 14 | Duration assumed - t | - | N | - | Item 14: 50% = 17,700.00 | 0.0 | 10620.0 | 7080.0 | 0.0 |
| PRC-CND50 |  | Delivery to site (Heet) - Steel & rigid conduits | 3d | 2027-02-05 | 2027-02-07 | PRC-CND20 | 80d | 58d | Procurement & Shipping (7-day, 8h) |  |  |  | - | - | P - Procurement | 2 - Procurement & Co | Procurement | Supplier | All | Civil | - | Planned (contractor) | - | N | - |  |  |  |  |  |
| PRC-MRK50 |  | Delivery to site (Heet) - Marker posts, warning tape & route markers | 3d | 2027-02-05 | 2027-02-07 | PRC-MRK20 | 244d | 118d | Procurement & Shipping (7-day, 8h) |  |  |  | - | - | P - Procurement | 2 - Procurement & Co | Procurement | Supplier | All | Civil | - | Planned (contractor) | - | N | - |  |  |  |  |  |
| PRC-HH50 |  | Delivery to site (Heet) - Handholes & manholes (precast) | 3d | 2027-02-12 | 2027-02-14 | PRC-HH20 | 73d | 51d | Procurement & Shipping (7-day, 8h) |  |  |  | - | - | P - Procurement | 2 - Procurement & Co | Procurement | Supplier | All | Civil | - | Planned (contractor) | - | N | - |  |  |  |  |  |

| ID | WBS | Activity | Duration | Start | Finish | Predecessors | Total float | Free float | Calendar | Resources | Cost | Actual cost | BoQ Mapping | Cost Engineering SAR | Cost Material SAR | Cost Labour SAR | Cost Indirect SAR | Design Stage | BoQ Section | EPC Phase | SoW Stage | Activity Category | Responsible | Section | System | BoQ Item | Basis | Risk Rank | Long Lead | LL No. |
| --- | --- | --- | --- | --- | --- | --- | --- | --- | --- | --- | --- | --- | --- | --- | --- | --- | --- | --- | --- | --- | --- | --- | --- | --- | --- | --- | --- | --- | --- | --- |
|  | 1.5 | **CONSTRUCTION (C)** |  | 2027-03-24 | 2027-10-10 |  |  |  |  |  |  |  |  |  |  |  |  |  |  |  |  |  |  |  |  |  |  |  |  |  |
|  | 1.5.2 | **Civil & Cable Works by Section (risk-ranked sequence)** |  | 2027-03-24 | 2027-09-27 |  |  |  |  |  |  |  |  |  |  |  |  |  |  |  |  |  |  |  |  |  |  |  |  |  |
|  | 1.5.2.1 | **Section 1** |  | 2027-03-24 | 2027-06-06 |  |  |  |  |  |  |  |  |  |  |  |  |  |  |  |  |  |  |  |  |  |  |  |  |  |
| CIV-110 |  | Section 1 - excavate trench (800x200 mm) & sweet-sand bedding, 1,100 LM | 10d | 2027-03-24 | 2027-04-06 | MOB-3010, PRC-SND10, MGT-1090 | 16d | 0d | Field Works (Sun-Thu, 8h) | Cost Distribution [143137]; Trench Crew [80 h] | 143,136.95 | 143,136.95 | Item 10: 11% = 143,136.95 | 0.0 | 21470.54 | 121666.41 | 0.0 | - | C - Materials, Civil | C - Construction | 2 - Procurement & Co | Civil Works | Contractor | S1 | Civil | 10 | Planned (contractor) | R1 | N | - |
| CIV-120 |  | Section 1 - handholes / manholes installation | 2d | 2027-04-07 | 2027-04-08 | CIV-110, PRC-HH50 | 16d |  | Field Works (Sun-Thu, 8h) | Cost Distribution [15664.9]; Civil Crew [16 h] | 15,664.92 | 15,664.92 | Item 12: 9% = 15,664.92 | 0.0 | 9398.95 | 6265.97 | 0.0 | - | C - Materials, Civil | C - Construction | 2 - Procurement & Co | Civil Works | Contractor | S1 | Civil | 12 | Planned (contractor) | R1 | N | - |
| CIV-130 |  | Section 1 - steel & rigid conduits at culverts / track crossings | 2d | 2027-04-07 | 2027-04-08 | CIV-110, PRC-CND50, PRM-2220 | 16d |  | Field Works (Sun-Thu, 8h) | Cost Distribution [9920.5]; Civil Crew [16 h] | 9,920.5 | 9,920.5 | Item 13: 8% = 9,920.50 | 0.0 | 5456.28 | 4464.23 | 0.0 | - | C - Materials, Civil | C - Construction | 2 - Procurement & Co | Civil Works | Contractor | S1 | Civil | 13 | Planned (contractor) | R1 | N | - |
| CAB-110 |  | Section 1 - Layer 1: lay DSS cable, pre-installed connectors, OTDR test | 4d | 2027-05-03 | 2027-05-06 | CIV-120, CIV-130, PRC-DSS50 | 0d |  | Field Works (Sun-Thu, 8h) | Cost Distribution [46987.6]; Cable Crew [32 h] | 46,987.6 | 46,987.6 | Item 09: 8% = 46,987.60 | 0.0 | 30541.94 | 16445.66 | 0.0 | - | C - Materials, Civil | C - Construction | 2 - Procurement & Co | Installation | Contractor | S1 | DSS | 09 | Planned (contractor) | R1 | N | - |
| CAB-120 |  | Section 1 - backfill & compaction - layer 1 | 2d | 2027-05-09 | 2027-05-10 | CAB-110 | 0d |  | Field Works (Sun-Thu, 8h) | Cost Distribution [39037.3]; Trench Crew [16 h] | 39,037.35 | 39,037.35 | Item 10: 3% = 39,037.35 | 0.0 | 5855.6 | 33181.75 | 0.0 | - | C - Materials, Civil | C - Construction | 2 - Procurement & Co | Civil Works | Contractor | S1 | Civil | 10 | Planned (contractor) | R1 | N | - |
| CAB-130 |  | Section 1 - Layer 2: pull 48-core FO cable (DAS), OTDR test | 4d | 2027-05-11 | 2027-05-20 | CAB-120, PRC-FO50 | 0d |  | Field Works (Sun-Thu, 8h) | Cost Distribution [53114.2]; Cable Crew [32 h] | 53,114.16 | 53,114.16 | Item 08: 8% = 53,114.16 | 0.0 | 31868.5 | 21245.66 | 0.0 | - | C - Materials, Civil | C - Construction | 2 - Procurement & Co | Installation | Contractor | S1 | DAS | 08 | Planned (contractor) | R1 | N | - |
| SPL-110 |  | Section 1 - fusion splicing (<=0.1 dB), FO closures & OTDR splice-loss test | 3d | 2027-05-23 | 2027-05-25 | CAB-130, PRC-CLS50 | 0d |  | Field Works (Sun-Thu, 8h) | Cost Distribution [15764.8]; Splicing & OTDR Team [24 h] | 15,764.8 | 15,764.8 | Item 11: 8% = 15,764.80 | 0.0 | 11035.36 | 4729.44 | 0.0 | - | C - Materials, Civil | C - Construction | 2 - Procurement & Co | Installation | Contractor | S1 | DAS | 11 | Planned (contractor) | R1 | N | - |
| CAB-140 |  | Section 1 - backfill & compaction - layer 2 | 2d | 2027-05-26 | 2027-05-27 | SPL-110 | 0d |  | Field Works (Sun-Thu, 8h) | Cost Distribution [39037.3]; Trench Crew [16 h] | 39,037.35 | 39,037.35 | Item 10: 3% = 39,037.35 | 0.0 | 5855.6 | 33181.75 | 0.0 | - | C - Materials, Civil | C - Construction | 2 - Procurement & Co | Civil Works | Contractor | S1 | Civil | 10 | Planned (contractor) | R1 | N | - |
| CAB-150 |  | Section 1 - Layer 3: lay TDR coaxial cable, continuity test | 3d | 2027-05-30 | 2027-06-01 | CAB-140, PRC-TDRC50 | 0d |  | Field Works (Sun-Thu, 8h) | Cost Distribution [46987.6]; Cable Crew [24 h] | 46,987.6 | 46,987.6 | Item 07: 8% = 46,987.60 | 0.0 | 28192.56 | 18795.04 | 0.0 | - | C - Materials, Civil | C - Construction | 2 - Procurement & Co | Installation | Contractor | S1 | TDR | 07 | Planned (contractor) | R1 | N | - |
| CAB-160 |  | Section 1 - final backfill, compaction & reinstatement | 2d | 2027-06-02 | 2027-06-03 | CAB-150 | 0d |  | Field Works (Sun-Thu, 8h) | Cost Distribution [39037.3]; Trench Crew [16 h] | 39,037.35 | 39,037.35 | Item 10: 3% = 39,037.35 | 0.0 | 5855.6 | 33181.75 | 0.0 | - | C - Materials, Civil | C - Construction | 2 - Procurement & Co | Civil Works | Contractor | S1 | Civil | 10 | Planned (contractor) | R1 | N | - |
| CIV-140 |  | Section 1 - marker posts, warning tape & route markers | 1d | 2027-06-06 | 2027-06-06 | CAB-160, PRC-MRK50 | 89d |  | Field Works (Sun-Thu, 8h) | Cost Distribution [3540]; Civil Crew [8 h] | 3,540 | 3,540 | Item 14: 10% = 3,540.00 | 0.0 | 2124.0 | 1416.0 | 0.0 | - | C - Materials, Civil | C - Construction | 2 - Procurement & Co | Civil Works | Contractor | S1 | Civil | 14 | Planned (contractor) | R1 | N | - |
| TST-110 |  | Section 1 - final OTDR certification & test record | 1d | 2027-06-06 | 2027-06-06 | CAB-160 | 87d | 80d | Field Works (Sun-Thu, 8h) | Cost Distribution [1585.92]; Splicing & OTDR Team [8 h] | 1,585.92 | 1,585.92 | Item 19: 16% = 1,585.92 | 0.0 | 0.0 | 1585.92 | 0.0 | - | E - Testing, Integra | C - Construction | 2 - Procurement & Co | Testing / Commission | Contractor | S1 | DAS | 19 | Planned (contractor) | R1 | N | - |
|  | 1.5.2.2 | **Section 2** |  | 2027-04-07 | 2027-07-04 |  |  |  |  |  |  |  |  |  |  |  |  |  |  |  |  |  |  |  |  |  |  |  |  |  |
| CIV-210 |  | Section 2 - excavate trench (800x200 mm) & sweet-sand bedding, 1,100 LM | 10d | 2027-04-07 | 2027-04-20 | CIV-110 | 26d | 0d | Field Works (Sun-Thu, 8h) | Cost Distribution [143137]; Trench Crew [80 h] | 143,136.95 | 143,136.95 | Item 10: 11% = 143,136.95 | 0.0 | 21470.54 | 121666.41 | 0.0 | - | C - Materials, Civil | C - Construction | 2 - Procurement & Co | Civil Works | Contractor | S2 | Civil | 10 | Planned (contractor) | R2 | N | - |
| CIV-220 |  | Section 2 - handholes / manholes installation | 2d | 2027-04-21 | 2027-04-22 | CIV-210, PRC-HH50 | 26d |  | Field Works (Sun-Thu, 8h) | Cost Distribution [15664.9]; Civil Crew [16 h] | 15,664.92 | 15,664.92 | Item 12: 9% = 15,664.92 | 0.0 | 9398.95 | 6265.97 | 0.0 | - | C - Materials, Civil | C - Construction | 2 - Procurement & Co | Civil Works | Contractor | S2 | Civil | 12 | Planned (contractor) | R2 | N | - |
| CIV-230 |  | Section 2 - steel & rigid conduits at culverts / track crossings | 2d | 2027-04-21 | 2027-04-22 | CIV-210, PRC-CND50, PRM-2220 | 26d |  | Field Works (Sun-Thu, 8h) | Cost Distribution [9920.5]; Civil Crew [16 h] | 9,920.5 | 9,920.5 | Item 13: 8% = 9,920.50 | 0.0 | 5456.28 | 4464.23 | 0.0 | - | C - Materials, Civil | C - Construction | 2 - Procurement & Co | Civil Works | Contractor | S2 | Civil | 13 | Planned (contractor) | R2 | N | - |
| CAB-210 |  | Section 2 - Layer 1: lay DSS cable, pre-installed connectors, OTDR test | 4d | 2027-06-06 | 2027-06-09 | CIV-220, CIV-230, PRC-DSS50, CAB-160 | 0d |  | Field Works (Sun-Thu, 8h) | Cost Distribution [46987.6]; Cable Crew [32 h] | 46,987.6 | 46,987.6 | Item 09: 8% = 46,987.60 | 0.0 | 30541.94 | 16445.66 | 0.0 | - | C - Materials, Civil | C - Construction | 2 - Procurement & Co | Installation | Contractor | S2 | DSS | 09 | Planned (contractor) | R2 | N | - |
| CAB-220 |  | Section 2 - backfill & compaction - layer 1 | 2d | 2027-06-10 | 2027-06-13 | CAB-210 | 0d |  | Field Works (Sun-Thu, 8h) | Cost Distribution [39037.3]; Trench Crew [16 h] | 39,037.35 | 39,037.35 | Item 10: 3% = 39,037.35 | 0.0 | 5855.6 | 33181.75 | 0.0 | - | C - Materials, Civil | C - Construction | 2 - Procurement & Co | Civil Works | Contractor | S2 | Civil | 10 | Planned (contractor) | R2 | N | - |
| CAB-230 |  | Section 2 - Layer 2: pull 48-core FO cable (DAS), OTDR test | 4d | 2027-06-14 | 2027-06-17 | CAB-220, PRC-FO50 | 0d |  | Field Works (Sun-Thu, 8h) | Cost Distribution [53114.2]; Cable Crew [32 h] | 53,114.16 | 53,114.16 | Item 08: 8% = 53,114.16 | 0.0 | 31868.5 | 21245.66 | 0.0 | - | C - Materials, Civil | C - Construction | 2 - Procurement & Co | Installation | Contractor | S2 | DAS | 08 | Planned (contractor) | R2 | N | - |
| SPL-210 |  | Section 2 - fusion splicing (<=0.1 dB), FO closures & OTDR splice-loss test | 3d | 2027-06-20 | 2027-06-22 | CAB-230, PRC-CLS50 | 0d |  | Field Works (Sun-Thu, 8h) | Cost Distribution [15764.8]; Splicing & OTDR Team [24 h] | 15,764.8 | 15,764.8 | Item 11: 8% = 15,764.80 | 0.0 | 11035.36 | 4729.44 | 0.0 | - | C - Materials, Civil | C - Construction | 2 - Procurement & Co | Installation | Contractor | S2 | DAS | 11 | Planned (contractor) | R2 | N | - |
| CAB-240 |  | Section 2 - backfill & compaction - layer 2 | 2d | 2027-06-23 | 2027-06-24 | SPL-210 | 0d |  | Field Works (Sun-Thu, 8h) | Cost Distribution [39037.3]; Trench Crew [16 h] | 39,037.35 | 39,037.35 | Item 10: 3% = 39,037.35 | 0.0 | 5855.6 | 33181.75 | 0.0 | - | C - Materials, Civil | C - Construction | 2 - Procurement & Co | Civil Works | Contractor | S2 | Civil | 10 | Planned (contractor) | R2 | N | - |
| CAB-250 |  | Section 2 - Layer 3: lay TDR coaxial cable, continuity test | 3d | 2027-06-27 | 2027-06-29 | CAB-240, PRC-TDRC50 | 0d |  | Field Works (Sun-Thu, 8h) | Cost Distribution [46987.6]; Cable Crew [24 h] | 46,987.6 | 46,987.6 | Item 07: 8% = 46,987.60 | 0.0 | 28192.56 | 18795.04 | 0.0 | - | C - Materials, Civil | C - Construction | 2 - Procurement & Co | Installation | Contractor | S2 | TDR | 07 | Planned (contractor) | R2 | N | - |
| CAB-260 |  | Section 2 - final backfill, compaction & reinstatement | 2d | 2027-06-30 | 2027-07-01 | CAB-250 | 0d |  | Field Works (Sun-Thu, 8h) | Cost Distribution [39037.3]; Trench Crew [16 h] | 39,037.35 | 39,037.35 | Item 10: 3% = 39,037.35 | 0.0 | 5855.6 | 33181.75 | 0.0 | - | C - Materials, Civil | C - Construction | 2 - Procurement & Co | Civil Works | Contractor | S2 | Civil | 10 | Planned (contractor) | R2 | N | - |
| CIV-240 |  | Section 2 - marker posts, warning tape & route markers | 1d | 2027-07-04 | 2027-07-04 | CAB-260, PRC-MRK50 | 69d |  | Field Works (Sun-Thu, 8h) | Cost Distribution [3540]; Civil Crew [8 h] | 3,540 | 3,540 | Item 14: 10% = 3,540.00 | 0.0 | 2124.0 | 1416.0 | 0.0 | - | C - Materials, Civil | C - Construction | 2 - Procurement & Co | Civil Works | Contractor | S2 | Civil | 14 | Planned (contractor) | R2 | N | - |
| TST-210 |  | Section 2 - final OTDR certification & test record | 1d | 2027-07-04 | 2027-07-04 | CAB-260 | 67d | 60d | Field Works (Sun-Thu, 8h) | Cost Distribution [1585.92]; Splicing & OTDR Team [8 h] | 1,585.92 | 1,585.92 | Item 19: 16% = 1,585.92 | 0.0 | 0.0 | 1585.92 | 0.0 | - | E - Testing, Integra | C - Construction | 2 - Procurement & Co | Testing / Commission | Contractor | S2 | DAS | 19 | Planned (contractor) | R2 | N | - |

| ID | WBS | Activity | Duration | Start | Finish | Predecessors | Total float | Free float | Calendar | Resources | Cost | Actual cost | BoQ Mapping | Cost Engineering SAR | Cost Material SAR | Cost Labour SAR | Cost Indirect SAR | Design Stage | BoQ Section | EPC Phase | SoW Stage | Activity Category | Responsible | Section | System | BoQ Item | Basis | Risk Rank | Long Lead | LL No. |
| --- | --- | --- | --- | --- | --- | --- | --- | --- | --- | --- | --- | --- | --- | --- | --- | --- | --- | --- | --- | --- | --- | --- | --- | --- | --- | --- | --- | --- | --- | --- |
|  | 1.5.2.3 | **Section 3** |  | 2027-06-06 | 2027-08-01 |  |  |  |  |  |  |  |  |  |  |  |  |  |  |  |  |  |  |  |  |  |  |  |  |  |
| CIV-310 |  | Section 3 - excavate trench (800x200 mm) & sweet-sand bedding, 1,100 LM | 10d | 2027-06-06 | 2027-06-17 | CIV-210, CAB-160 | 8d | 0d | Field Works (Sun-Thu, 8h) | Cost Distribution [143137]; Trench Crew [80 h] | 143,136.95 | 143,136.95 | Item 10: 11% = 143,136.95 | 0.0 | 21470.54 | 121666.41 | 0.0 | - | C - Materials, Civil | C - Construction | 2 - Procurement & Co | Civil Works | Contractor | S3 | Civil | 10 | Planned (contractor) | R3 | N | - |
| CIV-320 |  | Section 3 - handholes / manholes installation | 2d | 2027-06-20 | 2027-06-21 | CIV-310, PRC-HH50 | 8d |  | Field Works (Sun-Thu, 8h) | Cost Distribution [15664.9]; Civil Crew [16 h] | 15,664.92 | 15,664.92 | Item 12: 9% = 15,664.92 | 0.0 | 9398.95 | 6265.97 | 0.0 | - | C - Materials, Civil | C - Construction | 2 - Procurement & Co | Civil Works | Contractor | S3 | Civil | 12 | Planned (contractor) | R3 | N | - |
| CIV-330 |  | Section 3 - steel & rigid conduits at culverts / track crossings | 2d | 2027-06-20 | 2027-06-21 | CIV-310, PRC-CND50, PRM-2220 | 8d |  | Field Works (Sun-Thu, 8h) | Cost Distribution [9920.5]; Civil Crew [16 h] | 9,920.5 | 9,920.5 | Item 13: 8% = 9,920.50 | 0.0 | 5456.28 | 4464.23 | 0.0 | - | C - Materials, Civil | C - Construction | 2 - Procurement & Co | Civil Works | Contractor | S3 | Civil | 13 | Planned (contractor) | R3 | N | - |
| CAB-310 |  | Section 3 - Layer 1: lay DSS cable, pre-installed connectors, OTDR test | 4d | 2027-07-04 | 2027-07-07 | CIV-320, CIV-330, PRC-DSS50, CAB-260 | 0d |  | Field Works (Sun-Thu, 8h) | Cost Distribution [46987.6]; Cable Crew [32 h] | 46,987.6 | 46,987.6 | Item 09: 8% = 46,987.60 | 0.0 | 30541.94 | 16445.66 | 0.0 | - | C - Materials, Civil | C - Construction | 2 - Procurement & Co | Installation | Contractor | S3 | DSS | 09 | Planned (contractor) | R3 | N | - |
| CAB-320 |  | Section 3 - backfill & compaction - layer 1 | 2d | 2027-07-08 | 2027-07-11 | CAB-310 | 0d |  | Field Works (Sun-Thu, 8h) | Cost Distribution [39037.3]; Trench Crew [16 h] | 39,037.35 | 39,037.35 | Item 10: 3% = 39,037.35 | 0.0 | 5855.6 | 33181.75 | 0.0 | - | C - Materials, Civil | C - Construction | 2 - Procurement & Co | Civil Works | Contractor | S3 | Civil | 10 | Planned (contractor) | R3 | N | - |
| CAB-330 |  | Section 3 - Layer 2: pull 48-core FO cable (DAS), OTDR test | 4d | 2027-07-12 | 2027-07-15 | CAB-320, PRC-FO50 | 0d |  | Field Works (Sun-Thu, 8h) | Cost Distribution [53114.2]; Cable Crew [32 h] | 53,114.16 | 53,114.16 | Item 08: 8% = 53,114.16 | 0.0 | 31868.5 | 21245.66 | 0.0 | - | C - Materials, Civil | C - Construction | 2 - Procurement & Co | Installation | Contractor | S3 | DAS | 08 | Planned (contractor) | R3 | N | - |
| SPL-310 |  | Section 3 - fusion splicing (<=0.1 dB), FO closures & OTDR splice-loss test | 3d | 2027-07-18 | 2027-07-20 | CAB-330, PRC-CLS50 | 0d |  | Field Works (Sun-Thu, 8h) | Cost Distribution [15764.8]; Splicing & OTDR Team [24 h] | 15,764.8 | 15,764.8 | Item 11: 8% = 15,764.80 | 0.0 | 11035.36 | 4729.44 | 0.0 | - | C - Materials, Civil | C - Construction | 2 - Procurement & Co | Installation | Contractor | S3 | DAS | 11 | Planned (contractor) | R3 | N | - |
| CAB-340 |  | Section 3 - backfill & compaction - layer 2 | 2d | 2027-07-21 | 2027-07-22 | SPL-310 | 0d |  | Field Works (Sun-Thu, 8h) | Cost Distribution [39037.3]; Trench Crew [16 h] | 39,037.35 | 39,037.35 | Item 10: 3% = 39,037.35 | 0.0 | 5855.6 | 33181.75 | 0.0 | - | C - Materials, Civil | C - Construction | 2 - Procurement & Co | Civil Works | Contractor | S3 | Civil | 10 | Planned (contractor) | R3 | N | - |
| CAB-350 |  | Section 3 - Layer 3: lay TDR coaxial cable, continuity test | 3d | 2027-07-25 | 2027-07-27 | CAB-340, PRC-TDRC50 | 0d |  | Field Works (Sun-Thu, 8h) | Cost Distribution [46987.6]; Cable Crew [24 h] | 46,987.6 | 46,987.6 | Item 07: 8% = 46,987.60 | 0.0 | 28192.56 | 18795.04 | 0.0 | - | C - Materials, Civil | C - Construction | 2 - Procurement & Co | Installation | Contractor | S3 | TDR | 07 | Planned (contractor) | R3 | N | - |
| CAB-360 |  | Section 3 - final backfill, compaction & reinstatement | 2d | 2027-07-28 | 2027-07-29 | CAB-350 | 0d |  | Field Works (Sun-Thu, 8h) | Cost Distribution [39037.3]; Trench Crew [16 h] | 39,037.35 | 39,037.35 | Item 10: 3% = 39,037.35 | 0.0 | 5855.6 | 33181.75 | 0.0 | - | C - Materials, Civil | C - Construction | 2 - Procurement & Co | Civil Works | Contractor | S3 | Civil | 10 | Planned (contractor) | R3 | N | - |
| CIV-340 |  | Section 3 - marker posts, warning tape & route markers | 1d | 2027-08-01 | 2027-08-01 | CAB-360, PRC-MRK50 | 49d |  | Field Works (Sun-Thu, 8h) | Cost Distribution [3540]; Civil Crew [8 h] | 3,540 | 3,540 | Item 14: 10% = 3,540.00 | 0.0 | 2124.0 | 1416.0 | 0.0 | - | C - Materials, Civil | C - Construction | 2 - Procurement & Co | Civil Works | Contractor | S3 | Civil | 14 | Planned (contractor) | R3 | N | - |
| TST-310 |  | Section 3 - final OTDR certification & test record | 1d | 2027-08-01 | 2027-08-01 | CAB-360 | 47d | 40d | Field Works (Sun-Thu, 8h) | Cost Distribution [1585.92]; Splicing & OTDR Team [8 h] | 1,585.92 | 1,585.92 | Item 19: 16% = 1,585.92 | 0.0 | 0.0 | 1585.92 | 0.0 | - | E - Testing, Integra | C - Construction | 2 - Procurement & Co | Testing / Commission | Contractor | S3 | DAS | 19 | Planned (contractor) | R3 | N | - |
|  | 1.5.2.4 | **Section 4** |  | 2027-07-04 | 2027-08-29 |  |  |  |  |  |  |  |  |  |  |  |  |  |  |  |  |  |  |  |  |  |  |  |  |  |
| CIV-410 |  | Section 4 - excavate trench (800x200 mm) & sweet-sand bedding, 1,100 LM | 10d | 2027-07-04 | 2027-07-15 | CIV-310, CAB-260 | 8d | 0d | Field Works (Sun-Thu, 8h) | Cost Distribution [143137]; Trench Crew [80 h] | 143,136.95 | 143,136.95 | Item 10: 11% = 143,136.95 | 0.0 | 21470.54 | 121666.41 | 0.0 | - | C - Materials, Civil | C - Construction | 2 - Procurement & Co | Civil Works | Contractor | S4 | Civil | 10 | Planned (contractor) | R4 | N | - |
| CIV-420 |  | Section 4 - handholes / manholes installation | 2d | 2027-07-18 | 2027-07-19 | CIV-410, PRC-HH50 | 8d |  | Field Works (Sun-Thu, 8h) | Cost Distribution [15664.9]; Civil Crew [16 h] | 15,664.92 | 15,664.92 | Item 12: 9% = 15,664.92 | 0.0 | 9398.95 | 6265.97 | 0.0 | - | C - Materials, Civil | C - Construction | 2 - Procurement & Co | Civil Works | Contractor | S4 | Civil | 12 | Planned (contractor) | R4 | N | - |
| CIV-430 |  | Section 4 - steel & rigid conduits at culverts / track crossings | 2d | 2027-07-18 | 2027-07-19 | CIV-410, PRC-CND50, PRM-2220 | 8d |  | Field Works (Sun-Thu, 8h) | Cost Distribution [9920.5]; Civil Crew [16 h] | 9,920.5 | 9,920.5 | Item 13: 8% = 9,920.50 | 0.0 | 5456.28 | 4464.23 | 0.0 | - | C - Materials, Civil | C - Construction | 2 - Procurement & Co | Civil Works | Contractor | S4 | Civil | 13 | Planned (contractor) | R4 | N | - |
| CAB-410 |  | Section 4 - Layer 1: lay DSS cable, pre-installed connectors, OTDR test | 4d | 2027-08-01 | 2027-08-04 | CIV-420, CIV-430, PRC-DSS50, CAB-360 | 0d |  | Field Works (Sun-Thu, 8h) | Cost Distribution [46987.6]; Cable Crew [32 h] | 46,987.6 | 46,987.6 | Item 09: 8% = 46,987.60 | 0.0 | 30541.94 | 16445.66 | 0.0 | - | C - Materials, Civil | C - Construction | 2 - Procurement & Co | Installation | Contractor | S4 | DSS | 09 | Planned (contractor) | R4 | N | - |
| CAB-420 |  | Section 4 - backfill & compaction - layer 1 | 2d | 2027-08-05 | 2027-08-08 | CAB-410 | 0d |  | Field Works (Sun-Thu, 8h) | Cost Distribution [39037.3]; Trench Crew [16 h] | 39,037.35 | 39,037.35 | Item 10: 3% = 39,037.35 | 0.0 | 5855.6 | 33181.75 | 0.0 | - | C - Materials, Civil | C - Construction | 2 - Procurement & Co | Civil Works | Contractor | S4 | Civil | 10 | Planned (contractor) | R4 | N | - |
| CAB-430 |  | Section 4 - Layer 2: pull 48-core FO cable (DAS), OTDR test | 4d | 2027-08-09 | 2027-08-12 | CAB-420, PRC-FO50 | 0d |  | Field Works (Sun-Thu, 8h) | Cost Distribution [53114.2]; Cable Crew [32 h] | 53,114.16 | 53,114.16 | Item 08: 8% = 53,114.16 | 0.0 | 31868.5 | 21245.66 | 0.0 | - | C - Materials, Civil | C - Construction | 2 - Procurement & Co | Installation | Contractor | S4 | DAS | 08 | Planned (contractor) | R4 | N | - |
| SPL-410 |  | Section 4 - fusion splicing (<=0.1 dB), FO closures & OTDR splice-loss test | 3d | 2027-08-15 | 2027-08-17 | CAB-430, PRC-CLS50 | 0d |  | Field Works (Sun-Thu, 8h) | Cost Distribution [15764.8]; Splicing & OTDR Team [24 h] | 15,764.8 | 15,764.8 | Item 11: 8% = 15,764.80 | 0.0 | 11035.36 | 4729.44 | 0.0 | - | C - Materials, Civil | C - Construction | 2 - Procurement & Co | Installation | Contractor | S4 | DAS | 11 | Planned (contractor) | R4 | N | - |
| CAB-440 |  | Section 4 - backfill & compaction - layer 2 | 2d | 2027-08-18 | 2027-08-19 | SPL-410 | 0d |  | Field Works (Sun-Thu, 8h) | Cost Distribution [39037.3]; Trench Crew [16 h] | 39,037.35 | 39,037.35 | Item 10: 3% = 39,037.35 | 0.0 | 5855.6 | 33181.75 | 0.0 | - | C - Materials, Civil | C - Construction | 2 - Procurement & Co | Civil Works | Contractor | S4 | Civil | 10 | Planned (contractor) | R4 | N | - |
| CAB-450 |  | Section 4 - Layer 3: lay TDR coaxial cable, continuity test | 3d | 2027-08-22 | 2027-08-24 | CAB-440, PRC-TDRC50 | 0d |  | Field Works (Sun-Thu, 8h) | Cost Distribution [46987.6]; Cable Crew [24 h] | 46,987.6 | 46,987.6 | Item 07: 8% = 46,987.60 | 0.0 | 28192.56 | 18795.04 | 0.0 | - | C - Materials, Civil | C - Construction | 2 - Procurement & Co | Installation | Contractor | S4 | TDR | 07 | Planned (contractor) | R4 | N | - |
| CAB-460 |  | Section 4 - final backfill, compaction & reinstatement | 2d | 2027-08-25 | 2027-08-26 | CAB-450 | 0d |  | Field Works (Sun-Thu, 8h) | Cost Distribution [39037.3]; Trench Crew [16 h] | 39,037.35 | 39,037.35 | Item 10: 3% = 39,037.35 | 0.0 | 5855.6 | 33181.75 | 0.0 | - | C - Materials, Civil | C - Construction | 2 - Procurement & Co | Civil Works | Contractor | S4 | Civil | 10 | Planned (contractor) | R4 | N | - |
| CIV-440 |  | Section 4 - marker posts, warning tape & route markers | 1d | 2027-08-29 | 2027-08-29 | CAB-460, PRC-MRK50 | 29d |  | Field Works (Sun-Thu, 8h) | Cost Distribution [3540]; Civil Crew [8 h] | 3,540 | 3,540 | Item 14: 10% = 3,540.00 | 0.0 | 2124.0 | 1416.0 | 0.0 | - | C - Materials, Civil | C - Construction | 2 - Procurement & Co | Civil Works | Contractor | S4 | Civil | 14 | Planned (contractor) | R4 | N | - |
| TST-410 |  | Section 4 - final OTDR certification & test record | 1d | 2027-08-29 | 2027-08-29 | CAB-460 | 27d | 20d | Field Works (Sun-Thu, 8h) | Cost Distribution [1585.92]; Splicing & OTDR Team [8 h] | 1,585.92 | 1,585.92 | Item 19: 16% = 1,585.92 | 0.0 | 0.0 | 1585.92 | 0.0 | - | E - Testing, Integra | C - Construction | 2 - Procurement & Co | Testing / Commission | Contractor | S4 | DAS | 19 | Planned (contractor) | R4 | N | - |

| ID | WBS | Activity | Duration | Start | Finish | Predecessors | Total float | Free float | Calendar | Resources | Cost | Actual cost | BoQ Mapping | Cost Engineering SAR | Cost Material SAR | Cost Labour SAR | Cost Indirect SAR | Design Stage | BoQ Section | EPC Phase | SoW Stage | Activity Category | Responsible | Section | System | BoQ Item | Basis | Risk Rank | Long Lead | LL No. |
| --- | --- | --- | --- | --- | --- | --- | --- | --- | --- | --- | --- | --- | --- | --- | --- | --- | --- | --- | --- | --- | --- | --- | --- | --- | --- | --- | --- | --- | --- | --- |
|  | 1.5.2.5 | **Section 5** |  | 2027-08-01 | 2027-09-27 |  |  |  |  |  |  |  |  |  |  |  |  |  |  |  |  |  |  |  |  |  |  |  |  |  |
| CIV-510 |  | Section 5 - excavate trench (800x200 mm) & sweet-sand bedding, 1,100 LM | 10d | 2027-08-01 | 2027-08-12 | CIV-410, CAB-360 | 8d | 0d | Field Works (Sun-Thu, 8h) | Cost Distribution [143137]; Trench Crew [80 h] | 143,136.95 | 143,136.95 | Item 10: 11% = 143,136.95 | 0.0 | 21470.54 | 121666.41 | 0.0 | - | C - Materials, Civil | C - Construction | 2 - Procurement & Co | Civil Works | Contractor | S5 | Civil | 10 | Planned (contractor) | R5 | N | - |
| CIV-520 |  | Section 5 - handholes / manholes installation | 2d | 2027-08-15 | 2027-08-16 | CIV-510, PRC-HH50 | 8d |  | Field Works (Sun-Thu, 8h) | Cost Distribution [15664.9]; Civil Crew [16 h] | 15,664.94 | 15,664.94 | Item 12: 9% = 15,664.94 | 0.0 | 9398.96 | 6265.98 | 0.0 | - | C - Materials, Civil | C - Construction | 2 - Procurement & Co | Civil Works | Contractor | S5 | Civil | 12 | Planned (contractor) | R5 | N | - |
| CIV-530 |  | Section 5 - steel & rigid conduits at culverts / track crossings | 2d | 2027-08-15 | 2027-08-16 | CIV-510, PRC-CND50, PRM-2220 | 8d |  | Field Works (Sun-Thu, 8h) | Cost Distribution [9920.48]; Civil Crew [16 h] | 9,920.48 | 9,920.48 | Item 13: 8% = 9,920.48 | 0.0 | 5456.26 | 4464.22 | 0.0 | - | C - Materials, Civil | C - Construction | 2 - Procurement & Co | Civil Works | Contractor | S5 | Civil | 13 | Planned (contractor) | R5 | N | - |
| CAB-510 |  | Section 5 - Layer 1: lay DSS cable, pre-installed connectors, OTDR test | 4d | 2027-08-29 | 2027-09-01 | CIV-520, CIV-530, PRC-DSS50, CAB-460 | 0d |  | Field Works (Sun-Thu, 8h) | Cost Distribution [46987.6]; Cable Crew [32 h] | 46,987.6 | 46,987.6 | Item 09: 8% = 46,987.60 | 0.0 | 30541.94 | 16445.66 | 0.0 | - | C - Materials, Civil | C - Construction | 2 - Procurement & Co | Installation | Contractor | S5 | DSS | 09 | Planned (contractor) | R5 | N | - |
| CAB-520 |  | Section 5 - backfill & compaction - layer 1 | 2d | 2027-09-02 | 2027-09-05 | CAB-510 | 0d |  | Field Works (Sun-Thu, 8h) | Cost Distribution [39037.3]; Trench Crew [16 h] | 39,037.35 | 39,037.35 | Item 10: 3% = 39,037.35 | 0.0 | 5855.6 | 33181.75 | 0.0 | - | C - Materials, Civil | C - Construction | 2 - Procurement & Co | Civil Works | Contractor | S5 | Civil | 10 | Planned (contractor) | R5 | N | - |
| CAB-530 |  | Section 5 - Layer 2: pull 48-core FO cable (DAS), OTDR test | 4d | 2027-09-06 | 2027-09-09 | CAB-520, PRC-FO50 | 0d |  | Field Works (Sun-Thu, 8h) | Cost Distribution [53114.2]; Cable Crew [32 h] | 53,114.16 | 53,114.16 | Item 08: 8% = 53,114.16 | 0.0 | 31868.5 | 21245.66 | 0.0 | - | C - Materials, Civil | C - Construction | 2 - Procurement & Co | Installation | Contractor | S5 | DAS | 08 | Planned (contractor) | R5 | N | - |
| SPL-510 |  | Section 5 - fusion splicing (<=0.1 dB), FO closures & OTDR splice-loss test | 3d | 2027-09-12 | 2027-09-14 | CAB-530, PRC-CLS50 | 0d |  | Field Works (Sun-Thu, 8h) | Cost Distribution [15764.8]; Splicing & OTDR Team [24 h] | 15,764.8 | 15,764.8 | Item 11: 8% = 15,764.80 | 0.0 | 11035.36 | 4729.44 | 0.0 | - | C - Materials, Civil | C - Construction | 2 - Procurement & Co | Installation | Contractor | S5 | DAS | 11 | Planned (contractor) | R5 | N | - |
| CAB-540 |  | Section 5 - backfill & compaction - layer 2 | 2d | 2027-09-15 | 2027-09-16 | SPL-510 | 0d |  | Field Works (Sun-Thu, 8h) | Cost Distribution [39037.3]; Trench Crew [16 h] | 39,037.35 | 39,037.35 | Item 10: 3% = 39,037.35 | 0.0 | 5855.6 | 33181.75 | 0.0 | - | C - Materials, Civil | C - Construction | 2 - Procurement & Co | Civil Works | Contractor | S5 | Civil | 10 | Planned (contractor) | R5 | N | - |
| CAB-550 |  | Section 5 - Layer 3: lay TDR coaxial cable, continuity test | 3d | 2027-09-19 | 2027-09-21 | CAB-540, PRC-TDRC50 | 0d |  | Field Works (Sun-Thu, 8h) | Cost Distribution [46987.6]; Cable Crew [24 h] | 46,987.6 | 46,987.6 | Item 07: 8% = 46,987.60 | 0.0 | 28192.56 | 18795.04 | 0.0 | - | C - Materials, Civil | C - Construction | 2 - Procurement & Co | Installation | Contractor | S5 | TDR | 07 | Planned (contractor) | R5 | N | - |
| CAB-560 |  | Section 5 - final backfill, compaction & reinstatement | 2d | 2027-09-22 | 2027-09-26 | CAB-550 | 7d | 0d | Field Works (Sun-Thu, 8h) | Cost Distribution [39037.3]; Trench Crew [16 h] | 39,037.35 | 39,037.35 | Item 10: 3% = 39,037.35 | 0.0 | 5855.6 | 33181.75 | 0.0 | - | C - Materials, Civil | C - Construction | 2 - Procurement & Co | Civil Works | Contractor | S5 | Civil | 10 | Planned (contractor) | R5 | N | - |
| CIV-540 |  | Section 5 - marker posts, warning tape & route markers | 1d | 2027-09-27 | 2027-09-27 | CAB-560, PRC-MRK50 | 9d |  | Field Works (Sun-Thu, 8h) | Cost Distribution [3540]; Civil Crew [8 h] | 3,540 | 3,540 | Item 14: 10% = 3,540.00 | 0.0 | 2124.0 | 1416.0 | 0.0 | - | C - Materials, Civil | C - Construction | 2 - Procurement & Co | Civil Works | Contractor | S5 | Civil | 14 | Planned (contractor) | R5 | N | - |
| TST-510 |  | Section 5 - final OTDR certification & test record | 1d | 2027-09-27 | 2027-09-27 | CAB-560 | 7d | 0d | Field Works (Sun-Thu, 8h) | Cost Distribution [1585.92]; Splicing & OTDR Team [8 h] | 1,585.92 | 1,585.92 | Item 19: 16% = 1,585.92 | 0.0 | 0.0 | 1585.92 | 0.0 | - | E - Testing, Integra | C - Construction | 2 - Procurement & Co | Testing / Commission | Contractor | S5 | DAS | 19 | Planned (contractor) | R5 | N | - |
|  | 1.5.3 | **Station Power, Shelter & Field Systems (TDR, Weather, Comms)** |  | 2027-03-24 | 2027-09-28 |  |  |  |  |  |  |  |  |  |  |  |  |  |  |  |  |  |  |  |  |  |  |  |  |  |
| SHL-3410 |  | Shelter expansion - civil works (if required per assessment) | 8d | 2027-03-24 | 2027-04-04 | PRM-2320, APR-1580, MOB-3010 | 104d | 4d | Field Works (Sun-Thu, 8h) | Cost Distribution [7552]; Civil Crew [64 h] | 7,552 | 7,552 | Item 18: 20% = 7,552.00 | 377.6 | 4531.2 | 2643.2 | 0.0 | - | D - TDR System, Equi | C - Construction | 2 - Procurement & Co | Installation | Contractor | All | Power | 18 | Planned (contractor) | - | N | - |
| PWR-3420 |  | Electrical installation - panels & power upgrade (incl. SEC connection) | 6d | 2027-04-11 | 2027-04-18 | SHL-3410, PRC-PWR50, PRM-2420 | 100d | 0d | Field Works (Sun-Thu, 8h) | Cost Distribution [5664]; Electrical Crew [48 h] | 5,664 | 5,664 | Item 18: 15% = 5,664.00 | 283.2 | 3398.4 | 1982.4 | 0.0 | - | D - TDR System, Equi | C - Construction | 2 - Procurement & Co | Installation | Contractor | All | Power | 18 | Planned (contractor) | - | N | - |
| PWR-3430 |  | UPS installation & 4-hour autonomy test | 3d | 2027-04-19 | 2027-04-21 | PWR-3420 | 100d | 0d | Field Works (Sun-Thu, 8h) | Cost Distribution [5664]; Electrical Crew [24 h] | 5,664 | 5,664 | Item 18: 15% = 5,664.00 | 283.2 | 3398.4 | 1982.4 | 0.0 | - | D - TDR System, Equi | C - Construction | 2 - Procurement & Co | Installation | Contractor | All | Power | 18 | Planned (contractor) | - | N | - |
| COM-3710 |  | Communication modules installation | 2d | 2027-04-22 | 2027-04-25 | PRC-COM50, PWR-3430 | 104d | 0d | Field Works (Sun-Thu, 8h) | Cost Distribution [11505]; Commissioning Team [32 h] | 11,505 | 11,505 | Item 17: 15% = 11,505.00 | 1150.5 | 8053.5 | 2301.0 | 0.0 | - | D - TDR System, Equi | C - Construction | 2 - Procurement & Co | Installation | Contractor | All | Comms | 17 | Planned (contractor) | - | N | - |
| WX-3610 |  | Weather station sensors installation | 3d | 2027-04-22 | 2027-04-26 | PRC-WX50, PWR-3430 | 103d | 0d | Field Works (Sun-Thu, 8h) | Cost Distribution [7965]; Commissioning Team [48 h] | 7,965 | 7,965 | Item 16: 15% = 7,965.00 | 398.25 | 5973.75 | 1593.0 | 0.0 | - | D - TDR System, Equi | C - Construction | 2 - Procurement & Co | Installation | Contractor | All | Weather | 16 | Planned (contractor) | - | N | - |
| COM-3720 |  | SIM activation, alert & e-mail distribution configuration | 3d | 2027-04-26 | 2027-04-28 | COM-3710, PRM-2520 | 104d |  | Field Works (Sun-Thu, 8h) | Cost Distribution [11505]; Commissioning Team [48 h] | 11,505 | 11,505 | Item 17: 15% = 11,505.00 | 1150.5 | 8053.5 | 2301.0 | 0.0 | - | D - TDR System, Equi | C - Construction | 2 - Procurement & Co | Installation | Contractor | All | Comms | 17 | Planned (contractor) | - | N | - |
| WX-3620 |  | Weather station integration with data logger | 3d | 2027-04-27 | 2027-04-29 | WX-3610 | 103d |  | Field Works (Sun-Thu, 8h) | Cost Distribution [7965]; Commissioning Team [48 h] | 7,965 | 7,965 | Item 16: 15% = 7,965.00 | 398.25 | 5973.75 | 1593.0 | 0.0 | - | D - TDR System, Equi | C - Construction | 2 - Procurement & Co | Installation | Contractor | All | Weather | 16 | Planned (contractor) | - | N | - |
| TDR-3510 |  | TDR system installation - interrogator & antenna | 5d | 2027-05-06 | 2027-05-12 | PRC-TDR50, PWR-3430 | 90d |  | Field Works (Sun-Thu, 8h) | Cost Distribution [53100]; Commissioning Team [80 h] | 53,100 | 53,100 | Item 15: 15% = 53,100.00 | 2655.0 | 42480.0 | 7965.0 | 0.0 | - | D - TDR System, Equi | C - Construction | 2 - Procurement & Co | Installation | Contractor | All | TDR | 15 | Planned (contractor) | - | N | - |
| TDR-3520 |  | TDR configuration, calibration & pre-commissioning | 4d | 2027-09-22 | 2027-09-28 | TDR-3510, CAB-550 | 0d |  | Field Works (Sun-Thu, 8h) | Cost Distribution [53100]; Commissioning Team [64 h] | 53,100 | 53,100 | Item 15: 15% = 53,100.00 | 2655.0 | 42480.0 | 7965.0 | 0.0 | - | D - TDR System, Equi | C - Construction | 2 - Procurement & Co | Installation | Contractor | All | TDR | 15 | Planned (contractor) | - | N | - |
|  | 1.5.4 | **Local Cloud, Cybersecurity & Integration Installation** |  | 2027-05-05 | 2027-10-10 |  |  |  |  |  |  |  |  |  |  |  |  |  |  |  |  |  |  |  |  |  |  |  |  |  |
| CLD-3810 |  | Local KSA cloud infrastructure - provisioning & set-up | 8d | 2027-05-05 | 2027-05-20 | PRC-CLD50, APR-1640 | 81d | 0d |  | Cost Distribution [152220]; IT/OT Engineers [128 h] | 152,220 | 152,220 | Item 22: 30% = 152,220.00 | 30444.0 | 121776.0 | 0.0 | 0.0 | - | E - Testing, Integra | C - Construction | 2 - Procurement & Co | Installation | Contractor | All | Cloud | 22 | Planned (contractor) | - | N | - |
| CLD-3820 |  | Local KSA cloud infrastructure - hardening & connectivity | 8d | 2027-05-23 | 2027-06-01 | CLD-3810 | 83d | 2d |  | Cost Distribution [152220]; IT/OT Engineers [128 h] | 152,220 | 152,220 | Item 22: 30% = 152,220.00 | 30444.0 | 121776.0 | 0.0 | 0.0 | - | E - Testing, Integra | C - Construction | 2 - Procurement & Co | Installation | Contractor | All | Cloud | 22 | Planned (contractor) | - | N | - |
| CYB-3920 |  | Cybersecurity controls implementation & hardening | 10d | 2027-05-23 | 2027-06-03 | CLD-3810, APR-1640 | 81d | 0d |  | Cost Distribution [226560]; IT/OT Engineers [160 h] | 226,560 | 226,560 | Item 23: 40% = 226,560.00 | 181248.0 | 45312.0 | 0.0 | 0.0 | - | E - Testing, Integra | C - Construction | 2 - Procurement & Co | Installation | Contractor | All | Cyber | 23 | Planned (contractor) | - | N | - |
| INT-4010 |  | Integration with existing system & iSiteCentral - interfaces & data mapping | 8d | 2027-09-29 | 2027-10-10 | CLD-3820, APR-1650, PRM-2620, TDR-3520, COM-3720, WX-3620 | 0d |  |  | Cost Distribution [177000]; IT/OT Engineers [128 h] | 177,000 | 177,000 | Item 21: 50% = 177,000.00 | 123900.0 | 17700.0 | 35400.0 | 0.0 | - | E - Testing, Integra | C - Construction | 2 - Procurement & Co | Installation | Contractor | All | Integration | 21 | Planned (contractor) | - | N | - |

| ID | WBS | Activity | Duration | Start | Finish | Predecessors | Total float | Free float | Calendar | Resources | Cost | Actual cost | BoQ Mapping | Cost Engineering SAR | Cost Material SAR | Cost Labour SAR | Cost Indirect SAR | Design Stage | BoQ Section | EPC Phase | SoW Stage | Activity Category | Responsible | Section | System | BoQ Item | Basis | Risk Rank | Long Lead | LL No. |
| --- | --- | --- | --- | --- | --- | --- | --- | --- | --- | --- | --- | --- | --- | --- | --- | --- | --- | --- | --- | --- | --- | --- | --- | --- | --- | --- | --- | --- | --- | --- |
|  | 1.6 | **TESTING, COMMISSIONING & HANDOVER (TC)** |  | 2027-06-06 | 2027-12-07 |  |  |  |  |  |  |  |  |  |  |  |  |  |  |  |  |  |  |  |  |  |  |  |  |  |
|  | 1.6.1 | **Testing & Site Acceptance (OTDR, SAT, Integration, Cyber Audit)** |  | 2027-06-06 | 2027-10-17 |  |  |  |  |  |  |  |  |  |  |  |  |  |  |  |  |  |  |  |  |  |  |  |  |  |
| CYB-3930 |  | Third-party cybersecurity audit | 10d | 2027-06-06 | 2027-06-17 | CYB-3920, CLD-3820 | 81d | 0d |  | Cost Distribution [113280] | 113,280 | 113,280 | Item 23: 20% = 113,280.00 | 90624.0 | 22656.0 | 0.0 | 0.0 | - | E - Testing, Integra | TC - Testing, Commis | 2 - Procurement & Co | Testing / Commission | Third-party auditor | All | Cyber | 23 | Planned (contractor) | - | N | - |
| CYB-3940 |  | Audit findings closure & verification | 4d | 2027-06-20 | 2027-06-23 | CYB-3930 | 81d |  |  | Cost Distribution [56640] | 56,640 | 56,640 | Item 23: 10% = 56,640.00 | 45312.0 | 11328.0 | 0.0 | 0.0 | - | E - Testing, Integra | TC - Testing, Commis | 2 - Procurement & Co | Testing / Commission | Contractor | All | Cyber | 23 | Planned (contractor) | - | N | - |
| TST-4110 |  | Full-route OTDR certification report & as-installed test records | 2d | 2027-09-28 | 2027-09-29 | TST-110, TST-210, TST-310, TST-410, TST-510 | 7d |  |  | Cost Distribution [1982.4] | 1,982.4 | 1,982.4 | Item 19: 20% = 1,982.40 | 0.0 | 0.0 | 1982.4 | 0.0 | - | E - Testing, Integra | TC - Testing, Commis | 2 - Procurement & Co | Testing / Commission | Contractor | All | DAS | 19 | Planned (contractor) | - | N | - |
| INT-4020 |  | End-to-end integration test with existing system & iSiteCentral (part of SAT) | 5d | 2027-10-11 | 2027-10-17 | MS-070, INT-4010, PRM-3120 | 0d |  |  | Cost Distribution [177000]; IT/OT Engineers [80 h] | 177,000 | 177,000 | Item 21: 50% = 177,000.00 | 123900.0 | 17700.0 | 35400.0 | 0.0 | - | E - Testing, Integra | TC - Testing, Commis | 2 - Procurement & Co | Testing / Commission | Contractor | All | Integration | 21 | Planned (contractor) | - | N | - |
| TST-4210 |  | SAT - site acceptance tests (sensors, power, communications, operational) | 5d | 2027-10-11 | 2027-10-17 | TST-4110, PRM-3120, APR-1670, MS-070 | 0d |  | Field Works (Sun-Thu, 8h) | Cost Distribution [106200]; Commissioning Team [80 h] | 106,200 | 106,200 | Item 27: 60% = 106,200.00 | 53100.0 | 0.0 | 53100.0 | 0.0 | - | F - Documentation, T | TC - Testing, Commis | 2 - Procurement & Co | Testing / Commission | Contractor | All | General | 27 | Planned (contractor) | - | N | - |
|  | 1.6.2 | **Commissioning & Performance Validation** |  | 2027-10-18 | 2027-11-07 |  |  |  |  |  |  |  |  |  |  |  |  |  |  |  |  |  |  |  |  |  |  |  |  |  |
| CMS-4310 |  | System commissioning & calibration - DAS, DSS, TDR & weather station | 5d | 2027-10-18 | 2027-10-24 | TST-4210, INT-4020, CYB-3940 | 0d |  | Field Works (Sun-Thu, 8h) | Cost Distribution [47577.6]; Commissioning Team [80 h] | 47,577.6 | 47,577.6 | Item 20: 60% = 47,577.60 | 14273.28 | 0.0 | 33304.32 | 0.0 | - | E - Testing, Integra | TC - Testing, Commis | 2 - Procurement & Co | Testing / Commission | Contractor | All | General | 20 | Planned (contractor) | - | N | - |
| CMS-4320 |  | Trial operation - baseline data collection & performance validation | 10d | 2027-10-25 | 2027-11-07 | CMS-4310 | 0d |  |  | Cost Distribution [31718.4]; Commissioning Team [160 h] | 31,718.4 | 31,718.4 | Item 20: 40% = 31,718.40 | 9515.52 | 0.0 | 22202.88 | 0.0 | - | E - Testing, Integra | TC - Testing, Commis | 2 - Procurement & Co | Testing / Commission | Contractor | All | General | 20 | Planned (contractor) | - | N | - |
|  | 1.6.3 | **Documentation & Training** |  | 2027-10-25 | 2027-11-15 |  |  |  |  |  |  |  |  |  |  |  |  |  |  |  |  |  |  |  |  |  |  |  |  |  |
| DOC-5020 |  | As-built drawings (3 sets, hard + soft) - final revision after SAT | 6d | 2027-10-25 | 2027-11-01 | CMS-4310 | 10d |  |  | Cost Distribution [44250]; Document Control / Tech Writers [96 h] | 44,250 | 44,250 | Item 24: 50% = 44,250.00 | 44250.0 | 0.0 | 0.0 | 0.0 | - | F - Documentation, T | TC - Testing, Commis | 2 - Procurement & Co | Documentation / Trai | Contractor | All | General | 24 | Planned (contractor) | - | N | - |
| DOC-5030 |  | O&M manuals (3 sets) - final revision | 6d | 2027-10-25 | 2027-11-01 | CMS-4310 | 10d |  |  | Cost Distribution [44250]; Document Control / Tech Writers [96 h] | 44,250 | 44,250 | Item 24: 50% = 44,250.00 | 44250.0 | 0.0 | 0.0 | 0.0 | - | F - Documentation, T | TC - Testing, Commis | 2 - Procurement & Co | Documentation / Trai | Contractor | All | General | 24 | Planned (contractor) | - | N | - |
| DOC-5040 |  | User training for SAR staff (5 days) | 5d | 2027-10-25 | 2027-10-31 | CMS-4310 | 21d | 5d |  | Cost Distribution [38822]; Commissioning Team [80 h] | 38,822 | 38,822 | Item 28: 70% = 38,822.00 | 38822.0 | 0.0 | 0.0 | 0.0 | - | F - Documentation, T | TC - Testing, Commis | 2 - Procurement & Co | Documentation / Trai | Contractor | All | General | 28 | Planned (contractor) | - | N | - |
| DOC-5010 |  | Technical reports - TDR, DAS (seismic), DSS strain, weather data & alerts | 6d | 2027-11-08 | 2027-11-15 | MS-100 | 0d |  |  | Cost Distribution [88500]; Document Control / Tech Writers [96 h] | 88,500 | 88,500 | Item 25: 100% = 88,500.00 | 88500.0 | 0.0 | 0.0 | 0.0 | - | F - Documentation, T | TC - Testing, Commis | 3 - Testing & Commis | Documentation / Trai | Contractor | All | General | 25 | Planned (contractor) | - | N | - |
|  | 1.6.4 | **Handover Submittals (Contractor)** |  | 2027-11-16 | 2027-12-01 |  |  |  |  |  |  |  |  |  |  |  |  |  |  |  |  |  |  |  |  |  |  |  |  |  |
| DOC-5050 |  | Handover dossier - QA/QC, material test & HSE records, reports - compile & submit | 2d | 2027-11-16 | 2027-11-17 | DOC-5010, DOC-5020, DOC-5030 | 0d |  |  |  |  |  |  |  |  |  |  | - | - | TC - Testing, Commis | 3 - Testing & Commis | Submittal (Contracto | Contractor | All | General | - | Planned (contractor) | - | N | - |
| SUB-5070 |  | Address SAR comments & resubmit dossier | 3d | 2027-11-29 | 2027-12-01 | APR-5060 | 0d |  |  |  |  |  |  |  |  |  |  | - | - | TC - Testing, Commis | 3 - Testing & Commis | Submittal (Contracto | Contractor | All | General | - | Planned (contractor) | - | N | - |
|  | 1.6.5 | **SAR Acceptance & Formal Handover** |  | 2027-11-18 | 2027-12-07 |  |  |  |  |  |  |  |  |  |  |  |  |  |  |  |  |  |  |  |  |  |  |  |  |  |
| APR-5060 |  | SAR review of handover dossier (as-builts, O&M, reports) | 7d | 2027-11-18 | 2027-11-28 | DOC-5050 | 0d |  |  |  |  |  |  |  |  |  |  | - | - | TC - Testing, Commis | 3 - Testing & Commis | SAR Approval / Revie | SAR | All | General | - | Duration assumed - t | - | N | - |
| APR-5080 |  | SAR final acceptance of handover dossier | 3d | 2027-12-02 | 2027-12-06 | SUB-5070 | 0d |  |  |  |  |  |  |  |  |  |  | - | - | TC - Testing, Commis | 3 - Testing & Commis | SAR Approval / Revie | SAR | All | General | - | Duration assumed - t | - | N | - |
| HND-5090 |  | Formal handover & Taking-Over certificate (SAR) | 1d | 2027-12-07 | 2027-12-07 | APR-5080, DEM-5100 | 0d |  |  | Cost Distribution [16638] | 16,638 | 16,638 | Item 28: 30% = 16,638.00 | 16638.0 | 0.0 | 0.0 | 0.0 | - | F - Documentation, T | TC - Testing, Commis | 4 - Documentation & | Handover | SAR | All | General | 28 | Planned (contractor) | - | N | - |
|  | 1.7 | **DEFECTS LIABILITY PERIOD - POST-COMPLETION (DLP)** |  | 2027-12-08 | 2028-12-07 |  |  |  |  |  |  |  |  |  |  |  |  |  |  |  |  |  |  |  |  |  |  |  |  |  |
| DLP-9020 |  | Defects liability support (12 months after Taking-Over) | 366d | 2027-12-08 | 2028-12-07 | MS-120 | 0d |  | Procurement & Shipping (7-day, 8h) | Cost Distribution [148680] | 148,680 | 148,680 | Item 29: 100% = 148,680.00 | 59472.0 | 0.0 | 89208.0 | 0.0 | - | F - Documentation, T | DLP - Post-completio | P - DLP (post-comple | DLP | Contractor | All | General | 29 | Planned (contractor) | - | N | - |

## Activity codes

| Code | Value | Meaning |
| --- | --- | --- |
| Activity Category | Documentation / Trai | Documentation / Training |
| Activity Category | SAR Approval / Revie | SAR Approval / Review |
| Activity Category | Submittal (Contracto | Submittal (Contractor) |
| Activity Category | Testing / Commission | Testing / Commissioning |
| Basis | Applicability & dura | Applicability & duration TBC |
| Basis | Duration assumed - t | Duration assumed - to be confirmed |
| Basis | Requirement confirme | Requirement confirmed (SoW / Portal guide) |
| BoQ Section | A - Preliminaries & | A - Preliminaries & General |
| BoQ Section | C - Materials, Civil | C - Materials, Civil & Cable Installation |
| BoQ Section | D - TDR System, Equi | D - TDR System, Equipment & Commissioning |
| BoQ Section | E - Testing, Integra | E - Testing, Integration & Cybersecurity |
| BoQ Section | F - Documentation, T | F - Documentation, Training & Handover |
| EPC Phase | DLP - Post-completio | DLP - Post-completion |
| EPC Phase | PA - Permits & Autho | PA - Permits & Authority Approvals |
| EPC Phase | PM - Project Managem | PM - Project Management |
| EPC Phase | TC - Testing, Commis | TC - Testing, Commissioning & Handover |
| SoW Stage | 1 - Mobilization & D | 1 - Mobilization & Design |
| SoW Stage | 2 - Procurement & Co | 2 - Procurement & Construction |
| SoW Stage | 3 - Testing & Commis | 3 - Testing & Commissioning |
| SoW Stage | 4 - Documentation & | 4 - Documentation & Handover |
| SoW Stage | P - DLP (post-comple | P - DLP (post-completion) |
